# Implantação do CMMI-DEV L2

Schedule from MS Project, 2010-02-01 to 2012-02-08, costs in R$.
eGovSS
Este cronograma é parte do Plano de Gerenciamento do projeto de Implantação do CMMI-DEV L2

## Calendars

- Padrão: Mon-Fri 08:00-12:00, 14:00-18:00; Sat-Sun off. Exceptions (off unless hours are given): 2010-01-01 to 2019-01-01 (Ano Novo, recurring), 2010-02-15 to 2010-02-17 (Período Carnavalesco), 2010-04-02 (Paixão de Cristo), 2010-04-21 to 2019-04-21 (Tiradentes, recurring), 2010-05-01 to 2019-05-01 (Dia do Trabalho, recurring), 2010-06-03 (Corpus Christ), 2010-09-07 to 2019-09-07 (Dia da Independência, recurring), 2010-10-12 to 2019-10-12 (N Sra Aparecida, recurring), 2010-11-02 to 2019-11-02 (Finados, recurring), 2010-11-15 to 2019-11-15 (Proclamação da Republica, recurring), 2010-12-08 to 2019-12-08 (N Sra Conceicao, recurring), 2010-12-25 to 2019-12-25 (Natal, recurring), 2010-12-31 to 2019-12-31 (Vespera de Ano, recurring).

## Resources

| Resource | Group | Unit | Rate |
| --- | --- | --- | --- |
| Luiz Alves | Assessoria |  | 32 |
| Maria Silva | Diretoria |  | 32 |
| Ana Beatriz | SEPG |  | 32 |
| Evandro Tavares | Consultoria |  |  |
| Daniela Amorim | Unidade de Desenvolvimento Recursos Humanos |  | 35 |
| Saulo de Tarso | Unidade de Desenvolvimento Recursos Humanos |  | 25 |
| Tarcísio Meira | Unidade de Desenvolvimento Recursos Humanos |  | 17.08 |
| Ubirajara Queiroga | Unidade de Desenvolvimento Recursos Humanos |  | 17.08 |
| Vanessa Amaral | Unidade de Desenvolvimento Recursos Humanos |  | 17.08 |
| Wesley Patrício | Unidade de Desenvolvimento Recursos Humanos |  | 17.08 |
| Carlos Eduardo | Unidade de Desenvolvimento Orçamentária e Administrativa |  | 35 |
| Luciano Pereira | Unidade de Desenvolvimento Orçamentária e Administrativa |  | 25 |
| Marta Andrade | Unidade de Desenvolvimento Orçamentária e Administrativa |  | 25 |
| Nair Belo | Unidade de Desenvolvimento Orçamentária e Administrativa |  | 17.08 |
| Olavo Mesquita | Unidade de Desenvolvimento Orçamentária e Administrativa |  | 17.08 |
| Patrícia Pilar | Unidade de Desenvolvimento Orçamentária e Administrativa |  | 17.08 |
| Quirino Peixoto | Unidade de Desenvolvimento Orçamentária e Administrativa |  | 25 |
| Renata de Sá | Unidade de Desenvolvimento Orçamentária e Administrativa |  | 17.08 |
| Bernardo Antônio | Unidade de Desenvolvimento Tributária |  | 35 |
| Fabiana Azevedo | Unidade de Desenvolvimento Tributária |  | 17.08 |
| George Vasconcelos | Unidade de Desenvolvimento Tributária |  | 17.08 |
| Hugo Almeida | Unidade de Desenvolvimento Tributária |  | 17.08 |
| Iara Joaquina | Unidade de Desenvolvimento Tributária |  | 25 |
| Joana Pereira | Unidade de Desenvolvimento Tributária |  | 17.08 |
| Waldemar Nogueira | Tecnologia e Suporte |  | 41.75 |
| Ricardo Carneiro | Tecnologia e Suporte |  | 27.04 |
| Vicente Silva | Tecnologia e Suporte |  | 14.23 |
| Pacote Microsoft Partner | Software | licença(s) |  |
| Enterprise Architech | Software | licença(s) | 100 |
| Microsoft Office 2007 | Software | licença(s) | 199 |
| Servidor SVN | Software | licença(s) |  |
| Business Object | Software | licença(s) |  |
| Estação de Trabalho PC | Hardware | und | 1600 |
| Servidor | Hardware | und | 2500 |
| Impressora A3 | Hardware | und | 1600 |
| Outros recursos computacionais | Hardware |  |  |
| Transporte | Despesas gerais |  |  |
| Hospedagem | Despesas gerais |  |  |
| Alimentação | Despesas gerais |  |  |
| Outras despesas | Despesas gerais |  |  |
| Avaliadores CMMI | Avaliação |  |  |
| Avaliação CMMI | Avaliação |  |  |
| Consultoria CMMI | Consultoria |  |  |
| Treinamento | Despesas gerais |  |  |

## Schedule

| ID | WBS | Task | Duration | Start | Finish | Predecessors | Baseline start | Baseline finish | Baseline duration | Total slack | Free slack | Resources | Work | Cost | Baseline cost |
| --- | --- | --- | --- | --- | --- | --- | --- | --- | --- | --- | --- | --- | --- | --- | --- |
| 1 | 1 | **Iniciação** | 187d | 2010-02-01 | 2010-11-01 |  | 2010-02-01 | 2010-11-01 | 187d | -31.02d | 0d |  | 382.5h | 86,860.4 | 86,860.4 |
| 2 | 1.1 | **Formar e institucionalizar SEPG** | 187d | 2010-02-01 | 2010-11-01 |  | 2010-02-01 | 2010-11-01 | 187d | -31.02d | 0d |  | 126.33h | 81,092.29 | 81,092.29 |
| 3 | 1.1.1 | **Treinamento** | 2d | 2010-02-01 | 2010-02-03 |  | 2010-02-01 | 2010-02-03 | 2d | -28.89d | 0d |  | 32h | 2,652 | 2,652 |
| 4 | 1.1.1.1 | Participar de treinamento: Introdução ao CMMI-DEV nível 2 de maturidade | 1d | 2010-02-01 | 2010-02-02 |  | 2010-02-01 | 2010-02-02 | 1d | -29.01d | 0d | Transporte [0.1%]; Alimentação [0.1%]; Hospedagem [0.3%]; Ana Beatriz; Luciano Pereira; Treinamento [0.8%] | 16h | 1,456 | 1,456 |
| 5 | 1.1.1.2 | Participar de treinamento: Técnicas de Diagnósticos | 0.5d | 2010-02-02 | 2010-02-02 | 4 | 2010-02-02 | 2010-02-02 | 0.5d | -28.89d | 0d | Transporte [0.2%]; Alimentação [0.1%]; Ana Beatriz; Luciano Pereira; Treinamento [0.8%] | 8h | 668 | 668 |
| 6 | 1.1.1.3 | Participar de treinamento: Gestão de Processos e Modelagem de Processos | 0.5d | 2010-02-02 | 2010-02-03 | 5 | 2010-02-02 | 2010-02-03 | 0.5d | -28.89d | 0d | Ana Beatriz; Luciano Pereira; Treinamento [0.8%] | 8h | 528 | 528 |
| 7 | 1.1.2 | **Infraestrutura** | 5.14d | 2010-02-01 | 2010-02-08 |  | 2010-02-01 | 2010-02-08 | 5.14d | -31.02d | 0d |  | 63.33h | 14,427.12 | 14,427.12 |
| 8 | 1.1.2.1 | Adquirir ferramentas | 1d | 2010-02-01 | 2010-02-02 |  | 2010-02-01 | 2010-02-02 | 1d | -31.15d | 0d | Pacote Microsoft Partner [0 licença(s)]; Waldemar Nogueira; Microsoft Office 2007 [2 licença(s)]; Impressora A3 [1 und] | 8h | 2,332 | 2,332 |
| 9 | 1.1.2.2 | **Hardware de apoio** | 3.04d | 2010-02-02 | 2010-02-05 |  | 2010-02-02 | 2010-02-05 | 3.04d | -31.02d | 0d |  | 40.5h | 11,183.41 | 11,183.41 |
| 10 | 1.1.2.2.1 | Instalar hardware | 1.02d | 2010-02-02 | 2010-02-03 | 8 | 2010-02-02 | 2010-02-03 | 1.02d | -31.02d | 0d | Vicente Silva; Servidor [2 und]; Estação de Trabalho PC [2 und]; Outros recursos computacionais [0.1%] | 8.17h | 8,316.21 | 8,316.21 |
| 11 | 1.1.2.2.2 | Instalar sistemas operacionais | 0.52d | 2010-02-03 | 2010-02-03 | 10 | 2010-02-03 | 2010-02-03 | 0.52d | -31.02d | 0d | Ricardo Carneiro; Vicente Silva; Pacote Microsoft Partner [0.05 licença(s)] | 8.33h | 2,171.96 | 2,171.96 |
| 12 | 1.1.2.2.3 | Configurar rede | 1d | 2010-02-03 | 2010-02-04 | 11 | 2010-02-03 | 2010-02-04 | 1d | -31.02d | 0d | Ricardo Carneiro; Vicente Silva; Outros recursos computacionais [0.2%] | 16h | 530.16 | 530.16 |
| 13 | 1.1.2.2.4 | Realizar testes de hardware | 0.5d | 2010-02-04 | 2010-02-05 | 12 | 2010-02-04 | 2010-02-05 | 0.5d | -31.02d | 0d | Ricardo Carneiro; Vicente Silva | 8h | 165.08 | 165.08 |
| 14 | 1.1.2.3 | **Software de apoio** | 1.09d | 2010-02-05 | 2010-02-08 |  | 2010-02-05 | 2010-02-08 | 1.09d | -31.02d | 0d |  | 14.83h | 911.71 | 911.71 |
| 15 | 1.1.2.3.1 | Implantar sistema de apoio a diagramação | 0.15d | 2010-02-05 | 2010-02-05 | 13 | 2010-02-05 | 2010-02-05 | 0.15d | 0d |  | Ricardo Carneiro; Vicente Silva; Pacote Microsoft Partner [0 licença(s)] | 2.33h | 48.15 | 48.15 |
| 16 | 1.1.2.3.2 | Implantar sistema de apoio a diagramação UML | 0.15d | 2010-02-05 | 2010-02-05 | 15 | 2010-02-05 | 2010-02-05 | 0.15d | 0d |  | Ricardo Carneiro; Enterprise Architech [1 licença(s)] | 1.17h | 131.55 | 131.55 |
| 17 | 1.1.2.3.3 | Implantar aplicativos de processamento de texto e planilha eletrônica | 0.15d | 2010-02-05 | 2010-02-05 | 16 | 2010-02-05 | 2010-02-05 | 0.15d | 0d |  | Ricardo Carneiro; Vicente Silva [50%]; Microsoft Office 2007 [2 licença(s)] | 1.75h | 437.85 | 437.85 |
| 18 | 1.1.2.3.4 | **Servidor de banco de dados** | 0.58d | 2010-02-05 | 2010-02-05 |  | 2010-02-05 | 2010-02-05 | 0.58d | -31.02d | 0d |  | 3.58h | 103.74 | 103.74 |
| 19 | 1.1.2.3.4.1 | Planejar implantação | 0.24d | 2010-02-05 | 2010-02-05 | 13 | 2010-02-05 | 2010-02-05 | 0.24d | -31.02d | 0d | Waldemar Nogueira | 1.92h | 80.02 | 80.02 |
| 20 | 1.1.2.3.4.2 | Realizar implantação | 0.27d | 2010-02-05 | 2010-02-05 | 19 | 2010-02-05 | 2010-02-05 | 0.27d | -31.02d | 0d | Vicente Silva [50%]; Pacote Microsoft Partner [0 licença(s)] | 1.08h | 15.42 | 15.42 |
| 21 | 1.1.2.3.4.3 | Testar e avaliar implantação | 0.07d | 2010-02-05 | 2010-02-05 | 20 | 2010-02-05 | 2010-02-05 | 0.07d | -31.02d | 0d | Vicente Silva | 0.58h | 8.3 | 8.3 |
| 22 | 1.1.2.3.5 | **Servidor de compartilhamento e publicações** | 0.85d | 2010-02-05 | 2010-02-08 |  | 2010-02-05 | 2010-02-08 | 0.85d | -31.02d | 0d |  | 6h | 190.43 | 190.43 |
| 23 | 1.1.2.3.5.1 | Planejar implantação | 0.24d | 2010-02-05 | 2010-02-05 | 19 | 2010-02-05 | 2010-02-05 | 0.24d | -30.92d | 0d | Waldemar Nogueira | 1.92h | 80.02 | 80.02 |
| 24 | 1.1.2.3.5.2 | Realizar implantação | 0.27d | 2010-02-05 | 2010-02-08 | 23, 21 | 2010-02-05 | 2010-02-08 | 0.27d | -31.02d | 0d | Ricardo Carneiro; Pacote Microsoft Partner [0 licença(s)] | 2.17h | 58.59 | 58.59 |
| 25 | 1.1.2.3.5.3 | Testar e avaliar implantação | 0.24d | 2010-02-08 | 2010-02-08 | 24 | 2010-02-08 | 2010-02-08 | 0.24d | -31.02d | 0d | Ricardo Carneiro | 1.92h | 51.83 | 51.83 |

| ID | WBS | Task | Type | Duration | Start | Finish | Predecessors | Baseline start | Baseline finish | Baseline duration | Total slack | Free slack | Constraint | Resources | Work | Cost | Baseline cost |
| --- | --- | --- | --- | --- | --- | --- | --- | --- | --- | --- | --- | --- | --- | --- | --- | --- | --- |
| 26 | 1.1.3 | **Time** |  | 187d | 2010-02-01 | 2010-11-01 |  | 2010-02-01 | 2010-11-01 | 187d | -26.89d | 0d |  |  | 31h | 64,013.17 | 64,013.17 |
| 27 | 1.1.3.1 | Realizar contratações | milestone | 0d | 2010-02-01 | 2010-02-01 |  | 2010-02-01 | 2010-02-01 | 0d | 0d |  |  |  |  |  |  |
| 28 | 1.1.3.2 | **Realizar pagamentos à consultoria** |  | 187d | 2010-02-01 | 2010-11-01 |  | 2010-02-01 | 2010-11-01 | 187d | 0d |  |  | Consultoria CMMI [0.4%] |  | 63,000 | 63,000 |
| 29 | 1.1.3.2.1 | Realizar pagamentos à consultoria 1 | milestone | 0d | 2010-02-01 | 2010-02-01 |  | 2010-02-01 | 2010-02-01 | 0d | 0d |  | start no earlier than 2010-02-01 |  |  |  |  |
| 30 | 1.1.3.2.2 | Realizar pagamentos à consultoria 2 | milestone | 0d | 2010-03-01 | 2010-03-01 |  | 2010-03-01 | 2010-03-01 | 0d | 0d |  | start no earlier than 2010-03-01 |  |  |  |  |
| 31 | 1.1.3.2.3 | Realizar pagamentos à consultoria 3 | milestone | 0d | 2010-04-05 | 2010-04-05 |  | 2010-04-05 | 2010-04-05 | 0d | 0d |  | start no earlier than 2010-04-05 |  |  |  |  |
| 32 | 1.1.3.2.4 | Realizar pagamentos à consultoria 4 | milestone | 0d | 2010-05-03 | 2010-05-03 |  | 2010-05-03 | 2010-05-03 | 0d | 0d |  | start no earlier than 2010-05-03 |  |  |  |  |
| 33 | 1.1.3.2.5 | Realizar pagamentos à consultoria 5 | milestone | 0d | 2010-06-07 | 2010-06-07 |  | 2010-06-07 | 2010-06-07 | 0d | 0d |  | start no earlier than 2010-06-07 |  |  |  |  |
| 34 | 1.1.3.2.6 | Realizar pagamentos à consultoria 6 | milestone | 0d | 2010-07-05 | 2010-07-05 |  | 2010-07-05 | 2010-07-05 | 0d | 0d |  | start no earlier than 2010-07-05 |  |  |  |  |
| 35 | 1.1.3.2.7 | Realizar pagamentos à consultoria 7 | milestone | 0d | 2010-08-02 | 2010-08-02 |  | 2010-08-02 | 2010-08-02 | 0d | 0d |  | start no earlier than 2010-08-02 |  |  |  |  |
| 36 | 1.1.3.2.8 | Realizar pagamentos à consultoria 8 | milestone | 0d | 2010-09-06 | 2010-09-06 |  | 2010-09-06 | 2010-09-06 | 0d | 0d |  | start no earlier than 2010-09-06 |  |  |  |  |
| 37 | 1.1.3.2.9 | Realizar pagamentos à consultoria 9 | milestone | 0d | 2010-10-04 | 2010-10-04 |  | 2010-10-04 | 2010-10-04 | 0d | 0d |  | start no earlier than 2010-10-04 |  |  |  |  |
| 38 | 1.1.3.2.10 | Realizar pagamentos à consultoria 10 | milestone | 0d | 2010-11-01 | 2010-11-01 |  | 2010-11-01 | 2010-11-01 | 0d | 0d |  | start no earlier than 2010-11-01 |  |  |  |  |
| 39 | 1.1.3.3 | Identificar time para a melhoria do processo |  | 1d | 2010-02-03 | 2010-02-04 | 6 | 2010-02-03 | 2010-02-04 | 1d | -28.89d | 0d |  | Ana Beatriz; Daniela Amorim; Carlos Eduardo; Bernardo Antônio; Luiz Alves; Evandro Tavares; Alimentação [0.1%]; Transporte [0.1%] | 31h | 1,013.17 | 1,013.17 |
| 40 | 1.1.4 | Institucionalização do SEPG | milestone | 0d | 2010-02-04 | 2010-02-04 | 39 | 2010-02-04 | 2010-02-04 | 0d | -28.89d | 0d |  |  |  |  |  |
| 41 | 1.2 | **Diagnóstico** |  | 11.45d | 2010-02-08 | 2010-02-26 |  | 2010-02-08 | 2010-02-26 | 11.45d | -31.22d | 0d |  |  | 184.17h | 3,878.11 | 3,878.11 |
| 42 | 1.2.1 | **Modelos dos processos atuais** |  | 8.74d | 2010-02-08 | 2010-02-23 |  | 2010-02-08 | 2010-02-23 | 8.74d | -31.22d | 0d |  |  | 120.17h | 2,609.11 | 2,609.11 |
| 43 | 1.2.1.1 | Coletar e revisar as políticas, processos e procedimentos |  | 5d | 2010-02-08 | 2010-02-18 | 40, 25 | 2010-02-08 | 2010-02-18 | 5d | -31.02d | 0d |  | Luciano Pereira [50%] | 25.71h | 500 | 500 |
| 44 | 1.2.1.2 | Examinar interfaces entre procedimentos |  | 2d | 2010-02-08 | 2010-02-10 | 43SS | 2010-02-08 | 2010-02-10 | 2d | -31.02d | 0d |  | Ana Beatriz [50%]; Luciano Pereira [50%] | 15.97h | 454.95 | 454.95 |
| 45 | 1.2.1.3 | Analisar funções dos envolvidos e disciplinas dentro da organização |  | 1d | 2010-02-08 | 2010-02-09 | 44SS | 2010-02-08 | 2010-02-09 | 1d | -31.02d | 0d |  | Ana Beatriz [50%] | 4h | 128 | 128 |
| 46 | 1.2.1.4 | Realizar análise do ciclo de vida e escopo dos procedimentos |  | 1.04d | 2010-02-09 | 2010-02-10 | 45 | 2010-02-09 | 2010-02-10 | 1.04d | -31.02d | 0d |  | Ana Beatriz [50%]; Evandro Tavares | 12.27h | 125.89 | 125.89 |
| 47 | 1.2.1.5 | Realizar análise da documentação produzida |  | 1.5d | 2010-02-10 | 2010-02-11 | 46 | 2010-02-10 | 2010-02-11 | 1.5d | -31.02d | 0d |  | Ana Beatriz [80%]; Evandro Tavares | 19.8h | 249.6 | 249.6 |
| 48 | 1.2.1.6 | Realizar modelagem do procedimentos analisados |  | 3d | 2010-02-11 | 2010-02-19 | 47 | 2010-02-11 | 2010-02-19 | 3d | -31.02d | 0d |  | Luciano Pereira [50%] | 12h | 300 | 300 |
| 49 | 1.2.1.7 | Validar modelos dos processos |  | 2d | 2010-02-22 | 2010-02-23 | 48 | 2010-02-22 | 2010-02-23 | 2d | -31.22d | 0d | start no earlier than 2010-02-22 | Ana Beatriz; Daniela Amorim; Carlos Eduardo; Bernardo Antônio; Luiz Alves; Evandro Tavares | 30.42h | 850.67 | 850.67 |

Notes:
- 44: Examinar interfaces entre procedimentos para assegurar que os artefatos produzidos en um processo satisfazem os requisitos do processo de recebimento
- 45: Analisar as funções que as pessoas executam e as várias disciplinas dentro da organização
- 46: ·Considerar o ciclo de vida das disciplinas e o escopo dos procedimentos / ·Considerar o nível de detalhes dos procedimentos escritos
- 47: Considerar o formato da documentação produzida

| ID | WBS | Task | Type | Duration | Start | Finish | Predecessors | Baseline start | Baseline finish | Baseline duration | Total slack | Free slack | Constraint | Resources | Work | Cost | Baseline cost |
| --- | --- | --- | --- | --- | --- | --- | --- | --- | --- | --- | --- | --- | --- | --- | --- | --- | --- |
| 50 | 1.2.2 | **Registros PIIs** |  | 2.71d | 2010-02-24 | 2010-02-26 |  | 2010-02-24 | 2010-02-26 | 2.71d | -31.22d | 0d |  |  | 64h | 1,269 | 1,269 |
| 51 | 1.2.2.1 | **Práticas Específicas** |  | 2d | 2010-02-24 | 2010-02-25 |  | 2010-02-24 | 2010-02-25 | 2d | -31.22d | 0d |  |  | 24h | 456 | 456 |
| 52 | 1.2.2.1.1 | Realizar análise de aderência às práticas específicas |  | 2d | 2010-02-24 | 2010-02-25 | 49 | 2010-02-24 | 2010-02-25 | 2d | -31.22d | 0d |  | Ana Beatriz [50%]; Luciano Pereira [50%]; Evandro Tavares [50%] | 24h | 456 | 456 |
| 53 | 1.2.2.2 | **Práticas Genéricas** |  | 2.08d | 2010-02-24 | 2010-02-26 |  | 2010-02-24 | 2010-02-26 | 2.08d | -31.22d | 0d |  |  | 23h | 411 | 411 |
| 54 | 1.2.2.2.1 | Realizar análise de aderência às práticas genéricas |  | 2.08d | 2010-02-24 | 2010-02-26 | 52SS | 2010-02-24 | 2010-02-26 | 2.08d | -31.22d | 0d |  | Ana Beatriz [50%]; Luciano Pereira [50%]; Evandro Tavares [50%] | 23h | 411 | 411 |
| 55 | 1.2.2.3 | **Planilha de Consolidação de Dados** |  | 0.62d | 2010-02-26 | 2010-02-26 |  | 2010-02-26 | 2010-02-26 | 0.62d | -31.22d | 0d |  |  | 17h | 402 | 402 |
| 56 | 1.2.2.3.1 | Realizar consolidação dos dados |  | 0.38d | 2010-02-26 | 2010-02-26 | 54 | 2010-02-26 | 2010-02-26 | 0.38d | -31.22d | 0d |  | Ana Beatriz; Evandro Tavares | 6h | 96 | 96 |
| 57 | 1.2.2.3.2 | Apresentar relatório sobre a consolidação dos dados |  | 2h | 2010-02-26 | 2010-02-26 | 56 | 2010-02-26 | 2010-02-26 | 2h | -31.22d | 0d |  | Ana Beatriz [50%]; Luiz Alves; Daniela Amorim; Carlos Eduardo; Bernardo Antônio; Evandro Tavares | 11h | 306 | 306 |
| 58 | 1.2.3 | Conclusão do diagnóstico | milestone | 0d | 2010-02-26 | 2010-02-26 | 57 | 2010-02-26 | 2010-02-26 | 0d | -31.22d | 0d |  |  |  |  |  |
| 59 | 1.3 | **Nivelamento** |  | 4.25d | 2010-02-26 | 2010-03-04 |  | 2010-02-26 | 2010-03-04 | 4.25d | -31.22d | 0d |  |  | 72h | 1,890 | 1,890 |
| 60 | 1.3.1 | **Processo unificado** |  | 4.25d | 2010-02-26 | 2010-03-04 |  | 2010-02-26 | 2010-03-04 | 4.25d | -31.22d | 0d |  |  | 72h | 1,890 | 1,890 |
| 61 | 1.3.1.1 | Definir abordagem para integração dos modelos |  | 0.25d | 2010-02-26 | 2010-02-26 | 49, 58 | 2010-02-26 | 2010-02-26 | 0.25d | -31.22d | 0d |  | Ana Beatriz; Luciano Pereira | 4h | 114 | 114 |
| 62 | 1.3.1.2 | Realizar unificação e construção de um processo preliminar padrão |  | 3d | 2010-02-26 | 2010-03-03 | 61 | 2010-02-26 | 2010-03-03 | 3d | -31.22d | 0d |  | Ana Beatriz [50%]; Luciano Pereira | 36h | 984 | 984 |
| 63 | 1.3.1.3 | Validar processo unificado |  | 1d | 2010-03-03 | 2010-03-04 | 62 | 2010-03-03 | 2010-03-04 | 1d | -31.22d | 0d |  | Ana Beatriz; Luiz Alves; Daniela Amorim; Carlos Eduardo; Bernardo Antônio; Evandro Tavares | 32h | 792 | 792 |
| 64 | 1.4 | Conclusão da fase de iniciação | milestone | 0d | 2010-03-04 | 2010-03-04 | 63, 58 | 2010-03-04 | 2010-03-04 | 0d | -31.34d | 0d |  |  |  |  |  |
| 65 | 2 | **Design** |  | 186.5d | 2010-02-19 | 2010-11-17 |  | 2010-02-19 | 2010-11-18 | 187.5d | -21.26d | 0d |  |  | 2596.01h | 62,755.77 | 62,503.77 |
| 66 | 2.1 | **Maturação dos processos** |  | 186.5d | 2010-02-19 | 2010-11-17 |  | 2010-02-19 | 2010-11-18 | 187.5d | -21.26d | 0d |  |  | 2596.01h | 62,755.77 | 62,503.77 |
| 67 | 2.1.1 | **REQM** |  | 40.34d | 2010-02-19 | 2010-04-19 |  | 2010-02-19 | 2010-04-19 | 40.34d | -21.26d | 0d |  |  | 553.21h | 11,378.31 | 11,378.31 |
| 68 | 2.1.1.1 | **Treinamentos** |  | 12.96d | 2010-02-19 | 2010-03-09 |  | 2010-02-19 | 2010-03-09 | 12.96d | -21.26d | 0d |  |  | 68h | 1,996 | 1,996 |
| 69 | 2.1.1.1.1 | Participar de treinamento: Gestão de Requisitos |  | 1d | 2010-02-19 | 2010-02-19 |  | 2010-02-19 | 2010-02-19 | 1d | 0d |  | must start on 2010-02-19 | Ana Beatriz; Daniela Amorim; Carlos Eduardo; Bernardo Antônio; Luciano Pereira; Saulo de Tarso; Marta Andrade | 56h | 1,696 | 1,696 |
| 70 | 2.1.1.1.2 | Desenvolver material de treinamento interno |  | 3d | 2010-03-04 | 2010-03-09 | 69, 64 | 2010-03-04 | 2010-03-09 | 3d | -31.22d | 0d |  | Luciano Pereira [50%] | 12h | 300 | 300 |
| 71 | 2.1.1.2 | **Plano de ação** |  | 1.01d | 2010-03-04 | 2010-03-05 |  | 2010-03-04 | 2010-03-05 | 1.01d | -31.22d | 0d |  |  | 11.21h | 284.71 | 284.71 |
| 72 | 2.1.1.2.1 | Criar plano de ação |  | 0.5d | 2010-03-04 | 2010-03-05 | 70SS | 2010-03-04 | 2010-03-05 | 0.5d | -31.22d | 0d |  | Ana Beatriz | 4h | 128 | 128 |
| 73 | 2.1.1.2.2 | Rever, modificar e aprovar plano de ação |  | 0.26d | 2010-03-05 | 2010-03-05 | 72 | 2010-03-05 | 2010-03-05 | 0.26d | -31.22d | 0d |  | Ana Beatriz; Luciano Pereira [50%]; Evandro Tavares | 5.21h | 92.71 | 92.71 |
| 74 | 2.1.1.2.3 | Atribuir responsabilidades |  | 0.25d | 2010-03-05 | 2010-03-05 | 73 | 2010-03-05 | 2010-03-05 | 0.25d | -31.22d | 0d |  | Ana Beatriz | 2h | 64 | 64 |

| ID | WBS | Task | Type | Duration | Start | Finish | Predecessors | Baseline start | Baseline finish | Baseline duration | Total slack | Free slack | Resources | Work | Cost | Baseline cost |
| --- | --- | --- | --- | --- | --- | --- | --- | --- | --- | --- | --- | --- | --- | --- | --- | --- |
| 75 | 2.1.1.3 | **Execução do plano de ação** |  | 6d | 2010-03-05 | 2010-03-15 |  | 2010-03-05 | 2010-03-15 | 6d | -31.22d | 0d |  | 64h | 1,024 | 1,024 |
| 76 | 2.1.1.3.1 | Realizar preparações de acordo com plano de ação |  | 2d | 2010-03-05 | 2010-03-09 | 74 | 2010-03-05 | 2010-03-09 | 2d | -31.22d | 0d | Ana Beatriz | 16h | 512 | 512 |
| 77 | 2.1.1.3.2 | Facilitar/revisar/monitorar trabalhos |  | 4d | 2010-03-09 | 2010-03-15 | 76 | 2010-03-09 | 2010-03-15 | 4d | 10.91d | 0d | Ana Beatriz [50%]; Evandro Tavares | 48h | 512 | 512 |
| 78 | 2.1.1.4 | **Sistema de gestão de requisitos** |  | 24.38d | 2010-03-09 | 2010-04-14 |  | 2010-03-09 | 2010-04-14 | 24.38d | -31.22d | 0d |  | 382h | 7,279.6 | 7,279.6 |
| 79 | 2.1.1.4.1 | Realizar levantamento dos requisitos |  | 2h | 2010-03-09 | 2010-03-10 | 76 | 2010-03-09 | 2010-03-10 | 2h | -31.22d | 0d | Luciano Pereira; Daniela Amorim; Carlos Eduardo; Bernardo Antônio | 4h | 120 | 120 |
| 80 | 2.1.1.4.2 | Realizar análise e especificação |  | 2d | 2010-03-10 | 2010-03-12 | 79 | 2010-03-10 | 2010-03-12 | 2d | -31.22d | 0d | Luciano Pereira | 16h | 400 | 400 |
| 81 | 2.1.1.4.3 | Verificar e validar |  | 4h | 2010-03-12 | 2010-03-12 | 80 | 2010-03-12 | 2010-03-12 | 4h | -31.22d | 0d | Luciano Pereira; Ana Beatriz [50%] | 6h | 164 | 164 |
| 82 | 2.1.1.4.4 | Executar desenvolvimento |  | 20d | 2010-03-12 | 2010-04-12 | 81 | 2010-03-12 | 2010-04-12 | 20d | -31.22d | 0d | Nair Belo; George Vasconcelos | 320h | 5,465.6 | 5,465.6 |
| 83 | 2.1.1.4.5 | Testar sistema |  | 1d | 2010-04-12 | 2010-04-13 | 82 | 2010-04-12 | 2010-04-13 | 1d | -31.22d | 0d | Luciano Pereira; Daniela Amorim | 16h | 480 | 480 |
| 84 | 2.1.1.4.6 | Validar produto junto as partes interessadas |  | 5h | 2010-04-13 | 2010-04-14 | 83 | 2010-04-13 | 2010-04-14 | 5h | -31.22d | 0d | Luciano Pereira; Daniela Amorim; Carlos Eduardo; Bernardo Antônio | 20h | 650 | 650 |
| 85 | 2.1.1.4.7 | Entrega do produto | milestone | 0d | 2010-04-14 | 2010-04-14 | 84 | 2010-04-14 | 2010-04-14 | 0d | 0d |  |  |  |  |  |
| 86 | 2.1.1.5 | **Construção de modelos** |  | 23.38d | 2010-03-15 | 2010-04-19 |  | 2010-03-15 | 2010-04-19 | 23.38d | -9.22d | 0d |  | 28h | 794 | 794 |
| 87 | 2.1.1.5.1 | **Aceitação dos requisitos** |  | 20.88d | 2010-03-15 | 2010-04-14 |  | 2010-03-15 | 2010-04-14 | 20.88d | -9.22d | 0d |  | 6h | 164 | 164 |
| 88 | 2.1.1.5.1.1 | Levantar requisitos |  | 2h | 2010-03-15 | 2010-03-16 | 77 | 2010-03-15 | 2010-03-16 | 2h | 10.91d | 20.12d | Ana Beatriz | 2h | 64 | 64 |
| 89 | 2.1.1.5.1.2 | Construir modelo |  | 4h | 2010-04-14 | 2010-04-14 | 88, 84 | 2010-04-14 | 2010-04-14 | 4h | -9.22d | 0d | Luciano Pereira | 4h | 100 | 100 |
| 90 | 2.1.1.5.2 | **Documento análise de impacto e de viabilidade dos requisitos** |  | 0.88d | 2010-04-14 | 2010-04-15 |  | 2010-04-14 | 2010-04-15 | 0.88d | -9.22d | 0d |  | 7h | 196 | 196 |
| 91 | 2.1.1.5.2.1 | Levantar requisitos |  | 3h | 2010-04-14 | 2010-04-15 | 89 | 2010-04-14 | 2010-04-15 | 3h | -9.22d | 0d | Ana Beatriz | 3h | 96 | 96 |
| 92 | 2.1.1.5.2.2 | Construir modelo |  | 4h | 2010-04-15 | 2010-04-15 | 91 | 2010-04-15 | 2010-04-15 | 4h | -9.22d | 0d | Luciano Pereira | 4h | 100 | 100 |
| 93 | 2.1.1.5.3 | **Registro de inconsistências** |  | 0.62d | 2010-04-15 | 2010-04-16 |  | 2010-04-15 | 2010-04-16 | 0.62d | -9.22d | 0d |  | 5h | 139 | 139 |
| 94 | 2.1.1.5.3.1 | Levantar requisitos |  | 2h | 2010-04-15 | 2010-04-15 | 92 | 2010-04-15 | 2010-04-15 | 2h | -9.22d | 0d | Ana Beatriz | 2h | 64 | 64 |
| 95 | 2.1.1.5.3.2 | Construir modelo |  | 3h | 2010-04-15 | 2010-04-16 | 94 | 2010-04-15 | 2010-04-16 | 3h | -9.22d | 0d | Luciano Pereira | 3h | 75 | 75 |
| 96 | 2.1.1.5.4 | **Seleção de fornecedores e critérios de avaliação e aceitação** |  | 0.88d | 2010-04-16 | 2010-04-19 |  | 2010-04-16 | 2010-04-19 | 0.88d | -9.22d | 0d |  | 7h | 203 | 203 |
| 97 | 2.1.1.5.4.1 | Levantar requisitos |  | 4h | 2010-04-16 | 2010-04-16 | 95 | 2010-04-16 | 2010-04-16 | 4h | -9.22d | 0d | Ana Beatriz | 4h | 128 | 128 |
| 98 | 2.1.1.5.4.2 | Construir modelo |  | 3h | 2010-04-16 | 2010-04-19 | 97 | 2010-04-16 | 2010-04-19 | 3h | -9.22d | 0d | Luciano Pereira | 3h | 75 | 75 |
| 99 | 2.1.1.5.5 | Validar modelo junto as partes interessadas |  | 1h | 2010-04-19 | 2010-04-19 | 98 | 2010-04-19 | 2010-04-19 | 1h | -9.22d | 0d | Luciano Pereira; Daniela Amorim; Carlos Eduardo; Bernardo Antônio; Ana Beatriz | 3h | 92 | 92 |
| 100 | 2.1.1.6 | Conclusão da maturação do processo REQM | milestone | 0d | 2010-04-19 | 2010-04-19 | 99 | 2010-04-19 | 2010-04-19 | 0d | -9.22d | 0d |  |  |  |  |

| ID | WBS | Task | Duration | Start | Finish | Predecessors | Baseline start | Baseline finish | Baseline duration | Total slack | Free slack | Resources | Work | Cost | Baseline cost |
| --- | --- | --- | --- | --- | --- | --- | --- | --- | --- | --- | --- | --- | --- | --- | --- |
| 101 | 2.1.2 | **PP** | 63.38d | 2010-04-19 | 2010-07-19 |  | 2010-04-19 | 2010-07-19 | 63.38d | -9.22d | 0d |  | 786.35h | 19,243.62 | 19,243.62 |
| 102 | 2.1.2.1 | **Treinamentos** | 5d | 2010-04-19 | 2010-04-27 |  | 2010-04-19 | 2010-04-27 | 5d | -9.22d | 0d |  | 120h | 3,680 | 3,680 |
| 103 | 2.1.2.1.1 | Participar de treinamento: Gerenciamento de Projetos | 1d | 2010-04-19 | 2010-04-20 | 100 | 2010-04-19 | 2010-04-20 | 1d | -9.22d | 0d | Luciano Pereira; Daniela Amorim; Carlos Eduardo; Bernardo Antônio; Ana Beatriz | 24h | 736 | 736 |
| 104 | 2.1.2.1.2 | Realizar treinamento sobre utilização da ferramenta de gestão de projetos | 16h | 2010-04-20 | 2010-04-23 | 103 | 2010-04-20 | 2010-04-23 | 16h | -9.22d | 0d | Luciano Pereira; Daniela Amorim; Carlos Eduardo; Bernardo Antônio; Ana Beatriz | 48h | 1,472 | 1,472 |
| 105 | 2.1.2.1.3 | Realizar treinamento sobre utilização da ferramenta de controle de versão | 16h | 2010-04-23 | 2010-04-27 | 104 | 2010-04-23 | 2010-04-27 | 16h | -9.22d | 0d | Luciano Pereira; Daniela Amorim; Carlos Eduardo; Bernardo Antônio; Ana Beatriz | 48h | 1,472 | 1,472 |
| 106 | 2.1.2.2 | **Plano de ação** | 1d | 2010-04-27 | 2010-04-28 |  | 2010-04-27 | 2010-04-28 | 1d | -9.22d | 0d |  | 12h | 306 | 306 |
| 107 | 2.1.2.2.1 | Criar plano de ação | 4h | 2010-04-27 | 2010-04-27 | 105 | 2010-04-27 | 2010-04-27 | 4h | -9.22d | 0d | Ana Beatriz | 4h | 128 | 128 |
| 108 | 2.1.2.2.2 | Rever, modificar e aprovar plano de ação | 2h | 2010-04-27 | 2010-04-28 | 107 | 2010-04-27 | 2010-04-28 | 2h | -9.22d | 0d | Ana Beatriz; Luciano Pereira; Evandro Tavares | 6h | 114 | 114 |
| 109 | 2.1.2.2.3 | Atribuir responsabilidades | 2h | 2010-04-28 | 2010-04-28 | 108 | 2010-04-28 | 2010-04-28 | 2h | -9.22d | 0d | Ana Beatriz | 2h | 64 | 64 |
| 110 | 2.1.2.3 | **Execução do plano de ação** | 8d | 2010-04-28 | 2010-05-10 |  | 2010-04-28 | 2010-05-10 | 8d | 0d |  |  | 96h | 2,048 | 2,048 |
| 111 | 2.1.2.3.1 | Realizar preparações de acordo com plano de ação | 4d | 2010-04-28 | 2010-05-04 | 109 | 2010-04-28 | 2010-05-04 | 4d | 0d |  | Ana Beatriz | 32h | 1,024 | 1,024 |
| 112 | 2.1.2.3.2 | Facilitar/revisar/monitorar trabalhos | 4d | 2010-05-04 | 2010-05-10 | 111 | 2010-05-04 | 2010-05-10 | 4d | 0d |  | Ana Beatriz; Evandro Tavares | 64h | 1,024 | 1,024 |
| 113 | 2.1.2.4 | **Infraestrutura** | 36.83d | 2010-05-10 | 2010-07-01 |  | 2010-05-10 | 2010-07-01 | 36.83d | 0d |  |  | 49.6h | 3,385.12 | 3,385.12 |
| 114 | 2.1.2.4.1 | **Servidor de projetos** | 0.88d | 2010-05-10 | 2010-05-11 |  | 2010-05-10 | 2010-05-11 | 0.88d | 0d |  |  | 7h | 162.67 | 162.67 |
| 115 | 2.1.2.4.1.1 | Planejar implantação | 1h | 2010-05-10 | 2010-05-10 | 112 | 2010-05-10 | 2010-05-10 | 1h | 0d |  | Waldemar Nogueira | 1h | 41.75 | 41.75 |
| 116 | 2.1.2.4.1.2 | Realizar implantação | 4h | 2010-05-10 | 2010-05-10 | 115 | 2010-05-10 | 2010-05-10 | 4h | 0d |  | Vicente Silva; Pacote Microsoft Partner [0 licença(s)] | 4h | 56.92 | 56.92 |
| 117 | 2.1.2.4.1.3 | Testar e avaliar implantação | 2h | 2010-05-10 | 2010-05-11 | 116 | 2010-05-10 | 2010-05-11 | 2h | 0d |  | Ana Beatriz | 2h | 64 | 64 |
| 118 | 2.1.2.4.2 | **Ferramenta de gerenciamento de projetos** | 14.21d | 2010-05-11 | 2010-05-31 |  | 2010-05-11 | 2010-05-31 | 14.21d | 0d |  |  | 7h | 187.24 | 187.24 |
| 119 | 2.1.2.4.2.1 | Realizar implantação | 112.67h | 2010-05-11 | 2010-05-31 | 117 | 2010-05-11 | 2010-05-31 | 112.67h | 0d |  | Ricardo Carneiro | 6h | 162.24 | 162.24 |
| 120 | 2.1.2.4.2.2 | Testar e avaliar implantação | 1h | 2010-05-31 | 2010-05-31 | 119 | 2010-05-31 | 2010-05-31 | 1h | 0d |  | Luciano Pereira | 1h | 25 | 25 |
| 121 | 2.1.2.4.3 | **Software de processamento de textos e planilha eletrônica** | 21.88d | 2010-05-31 | 2010-07-01 |  | 2010-05-31 | 2010-07-01 | 21.88d | 0d |  |  | 7h | 2,179.28 | 2,179.28 |
| 122 | 2.1.2.4.3.1 | Realizar implantação | 174h | 2010-05-31 | 2010-07-01 | 119 | 2010-05-31 | 2010-07-01 | 174h | 0d |  | Ricardo Carneiro; Microsoft Office 2007 [10 licença(s)] | 6h | 2,152.24 | 2,152.24 |
| 123 | 2.1.2.4.3.2 | Testar e avaliar implantação | 1h | 2010-07-01 | 2010-07-01 | 122 | 2010-07-01 | 2010-07-01 | 1h | 0d |  | Ricardo Carneiro | 1h | 27.04 | 27.04 |
| 124 | 2.1.2.4.4 | **Serviço de controle de versão** | 2d | 2010-05-10 | 2010-05-12 |  | 2010-05-10 | 2010-05-12 | 2d | 0d |  |  | 8.8h | 273.36 | 273.36 |
| 125 | 2.1.2.4.4.1 | Planejar implantação | 2h | 2010-05-10 | 2010-05-10 | 115 | 2010-05-10 | 2010-05-10 | 2h | 0d |  | Waldemar Nogueira | 2h | 83.5 | 83.5 |
| 126 | 2.1.2.4.4.2 | Realizar implantação | 4h | 2010-05-10 | 2010-05-11 | 116, 125 | 2010-05-10 | 2010-05-11 | 4h | 0d |  | Vicente Silva [50%] | 2h | 28.46 | 28.46 |
| 127 | 2.1.2.4.4.3 | Testar e avaliar implantação | 1d | 2010-05-11 | 2010-05-12 | 126 | 2010-05-11 | 2010-05-12 | 1d | 0d |  | Ana Beatriz [53.3%]; Waldemar Nogueira [10%] | 4.8h | 161.4 | 161.4 |

| ID | WBS | Task | Type | Duration | Start | Finish | Predecessors | Baseline start | Baseline finish | Baseline duration | Total slack | Free slack | Resources | Work | Cost | Baseline cost |
| --- | --- | --- | --- | --- | --- | --- | --- | --- | --- | --- | --- | --- | --- | --- | --- | --- |
| 128 | 2.1.2.4.5 | **Serviços de comunicação** |  | 3.38d | 2010-05-10 | 2010-05-14 |  | 2010-05-10 | 2010-05-14 | 3.38d | 0d |  |  | 19.8h | 582.57 | 582.57 |
| 129 | 2.1.2.4.5.1 | Planejar implantação |  | 3h | 2010-05-10 | 2010-05-11 | 125 | 2010-05-10 | 2010-05-11 | 3h | 0d |  | Waldemar Nogueira | 3h | 125.25 | 125.25 |
| 130 | 2.1.2.4.5.2 | Realizar implantação |  | 8h | 2010-05-11 | 2010-05-12 | 129 | 2010-05-11 | 2010-05-12 | 8h | 0d |  | Vicente Silva [50%]; Waldemar Nogueira [20%]; Pacote Microsoft Partner [0 licença(s)] | 5.6h | 123.72 | 123.72 |
| 131 | 2.1.2.4.5.3 | Testar e avaliar implantação |  | 2d | 2010-05-12 | 2010-05-14 | 130 | 2010-05-12 | 2010-05-14 | 2d | 0d |  | Waldemar Nogueira [20%]; Luciano Pereira [50%] | 11.2h | 333.6 | 333.6 |
| 132 | 2.1.2.5 | **Construção de sistemas de apoio** |  | 47.5d | 2010-04-28 | 2010-07-05 |  | 2010-04-28 | 2010-07-05 | 47.5d | -9.22d | 0d |  | 461.75h | 8,464.5 | 8,464.5 |
| 133 | 2.1.2.5.1 | **Sistema de estimativas** |  | 12.38d | 2010-04-28 | 2010-05-14 |  | 2010-04-28 | 2010-05-14 | 12.38d | -9.22d | 0d |  | 178.75h | 3,173.3 | 3,173.3 |
| 134 | 2.1.2.5.1.1 | Realizar levantamento dos requisitos |  | 4h | 2010-04-28 | 2010-04-28 | 105, 109 | 2010-04-28 | 2010-04-28 | 4h | -9.22d | 0d | Luciano Pereira | 4h | 100 | 100 |
| 135 | 2.1.2.5.1.2 | Realizar análise e especificação |  | 6h | 2010-04-28 | 2010-04-29 | 134 | 2010-04-28 | 2010-04-29 | 6h | -9.22d | 0d | Luciano Pereira | 6h | 150 | 150 |
| 136 | 2.1.2.5.1.3 | Verificar e validar |  | 2h | 2010-04-29 | 2010-04-29 | 135 | 2010-04-29 | 2010-04-29 | 2h | -9.22d | 0d | Evandro Tavares | 2h |  |  |
| 137 | 2.1.2.5.1.4 | Executar desenvolvimento |  | 10d | 2010-04-29 | 2010-05-13 | 136 | 2010-04-29 | 2010-05-13 | 10d | -9.22d | 0d | Nair Belo; George Vasconcelos | 160h | 2,732.8 | 2,732.8 |
| 138 | 2.1.2.5.1.5 | Testar sistema |  | 5h | 2010-05-13 | 2010-05-14 | 137 | 2010-05-13 | 2010-05-14 | 5h | -9.22d | 0d | Ana Beatriz [50%]; Luciano Pereira [50%] | 2.75h | 70.5 | 70.5 |
| 139 | 2.1.2.5.1.6 | Validar produto junto as partes interessadas |  | 2h | 2010-05-14 | 2010-05-14 | 138 | 2010-05-14 | 2010-05-14 | 2h | -9.22d | 0d | Luciano Pereira; Daniela Amorim; Carlos Eduardo; Bernardo Antônio | 4h | 120 | 120 |
| 140 | 2.1.2.5.1.7 | Entrega do produto | milestone | 0d | 2010-05-14 | 2010-05-14 | 139 | 2010-05-14 | 2010-05-14 | 0d | -9.22d | 0d |  |  |  |  |
| 141 | 2.1.2.5.2 | **Sistema de registro de perfis** |  | 35.12d | 2010-05-14 | 2010-07-05 |  | 2010-05-14 | 2010-07-05 | 35.12d | -9.22d | 0d |  | 283h | 5,291.2 | 5,291.2 |
| 142 | 2.1.2.5.2.1 | Realizar levantamento dos requisitos |  | 4h | 2010-05-14 | 2010-05-17 | 140 | 2010-05-14 | 2010-05-17 | 4h | -9.22d | 0d | Luciano Pereira | 4h | 100 | 100 |
| 143 | 2.1.2.5.2.2 | Realizar análise e especificação |  | 2d | 2010-05-17 | 2010-05-19 | 142 | 2010-05-17 | 2010-05-19 | 2d | -9.22d | 0d | Luciano Pereira | 16h | 400 | 400 |
| 144 | 2.1.2.5.2.3 | Verificar e validar |  | 5h | 2010-05-19 | 2010-05-19 | 143 | 2010-05-19 | 2010-05-19 | 5h | -9.22d | 0d | Ana Beatriz | 5h | 160 | 160 |
| 145 | 2.1.2.5.2.4 | Executar desenvolvimento |  | 25d | 2010-05-19 | 2010-06-24 | 144 | 2010-05-19 | 2010-06-24 | 25d | -9.22d | 0d | Nair Belo; George Vasconcelos | 240h | 4,099.2 | 4,099.2 |
| 146 | 2.1.2.5.2.5 | Testar sistema |  | 54h | 2010-06-24 | 2010-07-05 | 145 | 2010-06-24 | 2010-07-05 | 54h | -9.22d | 0d | Ana Beatriz; Luciano Pereira | 12h | 342 | 342 |
| 147 | 2.1.2.5.2.6 | Validar produto junto as partes interessadas |  | 2h | 2010-07-05 | 2010-07-05 | 146 | 2010-07-05 | 2010-07-05 | 2h | -9.22d | 0d | Luciano Pereira; Daniela Amorim; Bernardo Antônio | 6h | 190 | 190 |
| 148 | 2.1.2.5.2.7 | Entrega do produto | milestone | 0d | 2010-07-05 | 2010-07-05 | 147 | 2010-07-05 | 2010-07-05 | 0d | -9.22d | 0d |  |  |  |  |
| 149 | 2.1.2.6 | **Construção de modelos** |  | 9.88d | 2010-07-05 | 2010-07-19 |  | 2010-07-05 | 2010-07-19 | 9.88d | -9.22d | 0d |  | 47h | 1,360 | 1,360 |
| 150 | 2.1.2.6.1 | **Ciclo de vida** |  | 5d | 2010-07-05 | 2010-07-12 |  | 2010-07-05 | 2010-07-12 | 5d | -9.22d | 0d |  | 40h | 1,136 | 1,136 |
| 151 | 2.1.2.6.1.1 | Levantar requisitos |  | 4h | 2010-07-05 | 2010-07-06 | 148 | 2010-07-05 | 2010-07-06 | 4h | -9.22d | 0d | Ana Beatriz | 4h | 128 | 128 |
| 152 | 2.1.2.6.1.2 | Construir modelo |  | 4d | 2010-07-06 | 2010-07-12 | 151 | 2010-07-06 | 2010-07-12 | 4d | -9.22d | 0d | Luciano Pereira | 24h | 600 | 600 |
| 153 | 2.1.2.6.1.3 | Validar modelo junto as partes interessadas |  | 4h | 2010-07-12 | 2010-07-12 | 152 | 2010-07-12 | 2010-07-12 | 4h | -9.22d | 0d | Ana Beatriz; Daniela Amorim; Carlos Eduardo; Bernardo Antônio | 12h | 408 | 408 |

| ID | WBS | Task | Type | Duration | Start | Finish | Predecessors | Baseline start | Baseline finish | Baseline duration | Total slack | Free slack | Constraint | Resources | Work | Cost | Baseline cost |
| --- | --- | --- | --- | --- | --- | --- | --- | --- | --- | --- | --- | --- | --- | --- | --- | --- | --- |
| 154 | 2.1.2.6.2 | **Plano de projeto** |  | 4.88d | 2010-07-12 | 2010-07-19 |  | 2010-07-12 | 2010-07-19 | 4.88d | -9.22d | 0d |  |  | 7h | 224 | 224 |
| 155 | 2.1.2.6.2.1 | Levantar requisitos |  | 4h | 2010-07-12 | 2010-07-13 | 153 | 2010-07-12 | 2010-07-13 | 4h | -9.22d | 0d |  | Ana Beatriz | 4h | 128 | 128 |
| 156 | 2.1.2.6.2.2 | Construir modelo |  | 4d | 2010-07-13 | 2010-07-19 | 155 | 2010-07-13 | 2010-07-19 | 4d | -9.22d | 0d |  | Luciano Pereira |  |  |  |
| 157 | 2.1.2.6.2.3 | Validar modelo junto as partes interessadas |  | 3h | 2010-07-19 | 2010-07-19 | 156 | 2010-07-19 | 2010-07-19 | 3h | -9.22d | 0d |  | Ana Beatriz; Daniela Amorim; Carlos Eduardo; Bernardo Antônio | 3h | 96 | 96 |
| 158 | 2.1.2.7 | Conclusão da maturação do processo PP | milestone | 0d | 2010-07-19 | 2010-07-19 | 157 | 2010-07-19 | 2010-07-19 | 0d | -9.22d | 0d |  |  |  |  |  |
| 159 | 2.1.3 | **PMC** |  | 34.28d | 2010-07-19 | 2010-09-03 |  | 2010-07-19 | 2010-09-06 | 34.41d | -26d | 0d |  |  | 145.25h | 3,510.25 | 3,418.25 |
| 160 | 2.1.3.1 | **Treinamentos** |  | 4d | 2010-07-19 | 2010-07-23 |  | 2010-07-19 | 2010-07-23 | 4d | -9.22d | 0d |  |  | 20h | 556 | 556 |
| 161 | 2.1.3.1.1 | Participar de treinamento: Monitoração e Controle de Projetos |  | 1d | 2010-07-19 | 2010-07-20 | 158 | 2010-07-19 | 2010-07-20 | 1d | -9.22d | 0d |  | Luciano Pereira; Daniela Amorim; Carlos Eduardo; Bernardo Antônio; Ana Beatriz | 8h | 256 | 256 |
| 162 | 2.1.3.1.2 | Desenvolver material de treinamento interno |  | 3d | 2010-07-20 | 2010-07-23 | 161 | 2010-07-20 | 2010-07-23 | 3d | 0d |  |  | Luciano Pereira [50%] | 12h | 300 | 300 |
| 163 | 2.1.3.2 | **Plano de ação** |  | 0.5d | 2010-07-20 | 2010-07-21 |  | 2010-07-20 | 2010-07-21 | 0.5d | -9.22d | 0d |  |  | 5h | 128 | 128 |
| 164 | 2.1.3.2.1 | Criar plano de ação |  | 0.25d | 2010-07-20 | 2010-07-20 | 161 | 2010-07-20 | 2010-07-20 | 0.25d | -9.22d | 0d |  | Ana Beatriz | 2h | 64 | 64 |
| 165 | 2.1.3.2.2 | Rever, modificar e aprovar plano de ação |  | 0.12d | 2010-07-20 | 2010-07-21 | 164 | 2010-07-20 | 2010-07-21 | 0.12d | -9.22d | 0d |  | Ana Beatriz; Evandro Tavares | 2h | 32 | 32 |
| 166 | 2.1.3.2.3 | Atribuir responsabilidades |  | 0.12d | 2010-07-21 | 2010-07-21 | 165 | 2010-07-21 | 2010-07-21 | 0.12d | -9.22d | 0d |  | Ana Beatriz | 1h | 32 | 32 |
| 167 | 2.1.3.3 | **Execução do plano de ação** |  | 12d | 2010-07-21 | 2010-08-06 |  | 2010-07-21 | 2010-08-06 | 12d | -9.22d | 0d |  |  | 100.25h | 2,292.25 | 2,292.25 |
| 168 | 2.1.3.3.1 | Realizar preparações de acordo com plano de ação |  | 6d | 2010-07-21 | 2010-07-29 | 166 | 2010-07-21 | 2010-07-29 | 6d | -9.22d | 0d |  | Ana Beatriz; Luciano Pereira [50%] | 48h | 1,368 | 1,368 |
| 169 | 2.1.3.3.2 | Facilitar/revisar/monitorar trabalhos |  | 6d | 2010-07-29 | 2010-08-06 | 168 | 2010-07-29 | 2010-08-06 | 6d | -9.22d | 0d |  | Ana Beatriz; Luciano Pereira; Evandro Tavares | 52.25h | 924.25 | 924.25 |
| 170 | 2.1.3.4 | **Construção de modelos** |  | 4d | 2010-08-31 | 2010-09-03 |  | 2010-08-31 | 2010-09-06 | 4.12d | -26d | 0d |  |  | 20h | 534 | 442 |
| 171 | 2.1.3.4.1 | **Registro de acompanhamento de projetos** |  | 2.5d | 2010-08-31 | 2010-09-02 |  | 2010-08-31 | 2010-09-02 | 2.5d | -26d | 0d |  |  | 3h | 75 | 75 |
| 172 | 2.1.3.4.1.1 | Levantar requisitos |  | 1d | 2010-08-31 | 2010-09-01 | 169 | 2010-08-31 | 2010-09-01 | 1d | -26d | 0d | finish no earlier than 2010-09-01 | Luciano Pereira [12.5%] | 1h | 25 | 25 |
| 173 | 2.1.3.4.1.2 | Construir modelo |  | 0.5d | 2010-09-02 | 2010-09-02 | 172 | 2010-09-02 | 2010-09-02 | 0.5d | -26d | 0d |  | Luciano Pereira [50%] | 2h | 50 | 50 |
| 174 | 2.1.3.4.2 | **Ações corretivas** |  | 0.88d | 2010-09-02 | 2010-09-03 |  | 2010-09-02 | 2010-09-03 | 0.88d | -26d | 0d |  |  | 6h | 150 | 150 |
| 175 | 2.1.3.4.2.1 | Levantar requisitos |  | 0.5d | 2010-09-02 | 2010-09-02 | 173 | 2010-09-02 | 2010-09-02 | 0.5d | -26d | 0d |  | Luciano Pereira [75%] | 3h | 75 | 75 |
| 176 | 2.1.3.4.2.2 | Construir modelo |  | 0.38d | 2010-09-03 | 2010-09-03 | 175 | 2010-09-03 | 2010-09-03 | 0.38d | -26d | 0d |  | Luciano Pereira | 3h | 75 | 75 |
| 177 | 2.1.3.4.3 | **Atas de reunião** |  | 0.38d | 2010-09-03 | 2010-09-03 |  | 2010-09-03 | 2010-09-03 | 0.62d | -26d | 0d |  |  | 5h | 125 | 125 |
| 178 | 2.1.3.4.3.1 | Levantar requisitos |  | 0.12d | 2010-09-03 | 2010-09-03 | 176 | 2010-09-03 | 2010-09-03 | 0.12d | -26d | 0d |  | Luciano Pereira | 1h | 25 | 25 |
| 179 | 2.1.3.4.3.2 | Construir modelo |  | 2h | 2010-09-03 | 2010-09-03 | 178 | 2010-09-03 | 2010-09-03 | 0.5d | -26d | 0d |  | Luciano Pereira [200%] | 4h | 100 | 100 |
| 180 | 2.1.3.4.4 | Validar modelos junto as partes interessadas |  | 2h | 2010-09-03 | 2010-09-03 | 179 | 2010-09-03 | 2010-09-06 | 1h | -26d | 0d |  | Luciano Pereira; Daniela Amorim; Carlos Eduardo; Bernardo Antônio; Ana Beatriz | 6h | 184 | 92 |
| 181 | 2.1.3.5 | Conclusão da maturação do processo PMC | milestone | 0d | 2010-09-03 | 2010-09-03 | 180 | 2010-09-06 | 2010-09-06 | 0d | -26d | 0d |  |  |  |  |  |

| ID | WBS | Task | Type | Duration | Start | Finish | Predecessors | Baseline start | Baseline finish | Baseline duration | Total slack | Free slack | Constraint | Resources | Work | Cost | Baseline cost |
| --- | --- | --- | --- | --- | --- | --- | --- | --- | --- | --- | --- | --- | --- | --- | --- | --- | --- |
| 182 | 2.1.4 | **SAM** |  | 11.88d | 2010-07-30 | 2010-08-16 |  | 2010-07-30 | 2010-08-11 | 8.12d | -1.88d | 0d |  |  | 140.5h | 3,612 | 3,196 |
| 183 | 2.1.4.1 | **Treinamentos** |  | 3d | 2010-07-30 | 2010-08-03 |  | 2010-07-30 | 2010-08-02 | 1.38d | -1.88d | 0d |  |  | 43h | 1,344 | 1,344 |
| 184 | 2.1.4.1.1 | Participar de treinamento: Gestão de Acordos com o Fornecedor |  | 1d | 2010-07-30 | 2010-07-30 | 181 | 2010-07-30 | 2010-07-30 | 1d | -26d | 0d | must start on 2010-07-30 | Luciano Pereira; Daniela Amorim; Carlos Eduardo; Bernardo Antônio; Ana Beatriz; Maria Silva; Luiz Alves | 40h | 1,248 | 1,248 |
| 185 | 2.1.4.1.2 | Desenvolver material de treinamento interno |  | 2d | 2010-08-02 | 2010-08-03 | 184 | 2010-08-02 | 2010-08-02 | 3h | -1.88d | 0d |  | Ana Beatriz [18.8%] | 3h | 96 | 96 |
| 186 | 2.1.4.2 | **Plano de ação** |  | 1d | 2010-08-04 | 2010-08-04 |  | 2010-08-02 | 2010-08-02 | 0.38d | -1.88d | 0d |  |  | 6.5h | 112 | 80 |
| 187 | 2.1.4.2.1 | Criar plano de ação |  | 3h | 2010-08-04 | 2010-08-04 | 185 | 2010-08-02 | 2010-08-02 | 0.12d | -1.88d | 0d |  | Ana Beatriz [33.3%] | 1h | 32 | 32 |
| 188 | 2.1.4.2.2 | Rever, modificar e aprovar plano de ação |  | 3h | 2010-08-04 | 2010-08-04 | 187 | 2010-08-02 | 2010-08-02 | 1h | -1.88d | 0d |  | Ana Beatriz [50%]; Evandro Tavares | 4.5h | 48 | 16 |
| 189 | 2.1.4.2.3 | Atribuir responsabilidades |  | 2h | 2010-08-04 | 2010-08-04 | 188 | 2010-08-02 | 2010-08-02 | 0.12d | -1.88d | 0d |  | Ana Beatriz [50%] | 1h | 32 | 32 |
| 190 | 2.1.4.3 | **Execução do plano de ação** |  | 6d | 2010-08-05 | 2010-08-12 |  | 2010-08-02 | 2010-08-09 | 4.5d | -1.88d | 0d |  |  | 72h | 1,536 | 1,152 |
| 191 | 2.1.4.3.1 | Realizar preparações de acordo com plano de ação |  | 3d | 2010-08-05 | 2010-08-09 | 189 | 2010-08-02 | 2010-08-05 | 3d | -1.88d | 0d |  | Ana Beatriz | 24h | 768 | 768 |
| 192 | 2.1.4.3.2 | Facilitar/revisar/monitorar trabalhos |  | 3d | 2010-08-10 | 2010-08-12 | 191 | 2010-08-05 | 2010-08-09 | 1.5d | -1.88d | 0d |  | Ana Beatriz; Evandro Tavares | 48h | 768 | 384 |
| 193 | 2.1.4.4 | **Construção de modelos** |  | 1.88d | 2010-08-13 | 2010-08-16 |  | 2010-08-09 | 2010-08-11 | 1.88d | -1.88d | 0d |  |  | 19h | 620 | 620 |
| 194 | 2.1.4.4.1 | **Registro dos fornecedores** |  | 0.75d | 2010-08-13 | 2010-08-13 |  | 2010-08-09 | 2010-08-09 | 0.75d | -1.88d | 0d |  |  | 6h | 192 | 192 |
| 195 | 2.1.4.4.1.1 | Levantar requisitos |  | 2h | 2010-08-13 | 2010-08-13 | 192 | 2010-08-09 | 2010-08-09 | 0.25d | -1.88d | 0d |  | Ana Beatriz | 2h | 64 | 64 |
| 196 | 2.1.4.4.1.2 | Construir modelo |  | 4h | 2010-08-13 | 2010-08-13 | 195 | 2010-08-09 | 2010-08-09 | 0.5d | -1.88d | 0d |  | Ana Beatriz | 4h | 128 | 128 |
| 197 | 2.1.4.4.2 | **Documento de solicitação de materiais e serviços** |  | 0.62d | 2010-08-13 | 2010-08-16 |  | 2010-08-10 | 2010-08-10 | 0.62d | -1.88d | 0d |  |  | 5h | 160 | 160 |
| 198 | 2.1.4.4.2.1 | Levantar requisitos |  | 1h | 2010-08-13 | 2010-08-13 | 196 | 2010-08-10 | 2010-08-10 | 0.12d | -1.88d | 0d |  | Ana Beatriz | 1h | 32 | 32 |
| 199 | 2.1.4.4.2.2 | Construir modelo |  | 4h | 2010-08-13 | 2010-08-16 | 198 | 2010-08-10 | 2010-08-10 | 0.5d | -1.88d | 0d |  | Ana Beatriz | 4h | 128 | 128 |
| 200 | 2.1.4.4.3 | Validar modelos junto as partes interessadas |  | 4h | 2010-08-16 | 2010-08-16 | 199 | 2010-08-10 | 2010-08-11 | 4h | -1.88d | 0d |  | Daniela Amorim; Carlos Eduardo; Bernardo Antônio; Ana Beatriz | 8h | 268 | 268 |
| 201 | 2.1.4.5 | Conclusão da maturação do processo SAM | milestone | 0d | 2010-08-16 | 2010-08-16 | 200 | 2010-08-11 | 2010-08-11 | 0d | -1.88d | 0d |  |  |  |  |  |
| 202 | 2.1.5 | **MA** |  | 38.75d | 2010-08-13 | 2010-10-07 |  | 2010-08-13 | 2010-10-07 | 38.75d | -18.62d | 0d |  |  | 498.2h | 14,933.58 | 14,933.58 |
| 203 | 2.1.5.1 | **Treinamentos** |  | 5d | 2010-08-13 | 2010-08-19 |  | 2010-08-13 | 2010-08-19 | 4.88d | -18.62d | 0d |  |  | 39h | 1,404 | 1,404 |
| 204 | 2.1.5.1.1 | Participar de treinamento: Medição e Análise |  | 1d | 2010-08-13 | 2010-08-13 | 201 | 2010-08-13 | 2010-08-13 | 1d | -1.88d | 0d | must start on 2010-08-13 | Ana Beatriz | 8h | 256 | 256 |
| 205 | 2.1.5.1.2 | Desenvolver material de treinamento interno |  | 2d | 2010-08-16 | 2010-08-17 | 204 | 2010-08-16 | 2010-08-17 | 1.88d | -19.62d | 0d |  | Ana Beatriz [93.8%] | 15h | 480 | 480 |
| 206 | 2.1.5.1.3 | Realizar treinamento sobre ferramenta de análise de negócio (BI) |  | 16h | 2010-08-18 | 2010-08-19 | 205 | 2010-08-17 | 2010-08-19 | 16h | -19.62d | 0d |  | Waldemar Nogueira | 16h | 668 | 668 |

| ID | WBS | Task | Type | Duration | Start | Finish | Predecessors | Baseline start | Baseline finish | Baseline duration | Total slack | Free slack | Constraint | Resources | Work | Cost | Baseline cost |
| --- | --- | --- | --- | --- | --- | --- | --- | --- | --- | --- | --- | --- | --- | --- | --- | --- | --- |
| 207 | 2.1.5.2 | **Plano de ação** |  | 2.38d | 2010-08-18 | 2010-08-20 |  | 2010-08-17 | 2010-08-20 | 2.38d | 0d |  |  |  | 31h | 608 | 608 |
| 208 | 2.1.5.2.1 | Criar plano de ação |  | 6h | 2010-08-18 | 2010-08-18 | 205 | 2010-08-17 | 2010-08-18 | 0.75d | 0d |  |  | Ana Beatriz | 6h | 192 | 192 |
| 209 | 2.1.5.2.2 | Rever, modificar e aprovar plano de ação |  | 1.5d | 2010-08-18 | 2010-08-20 | 208 | 2010-08-18 | 2010-08-20 | 1.5d | 0d |  |  | Ana Beatriz; Evandro Tavares | 24h | 384 | 384 |
| 210 | 2.1.5.2.3 | Atribuir responsabilidades |  | 1h | 2010-08-20 | 2010-08-20 | 209 | 2010-08-20 | 2010-08-20 | 0.12d | 0d |  |  | Ana Beatriz | 1h | 32 | 32 |
| 211 | 2.1.5.3 | **Execução do plano de ação** |  | 5d | 2010-08-20 | 2010-08-27 |  | 2010-08-20 | 2010-08-27 | 5d | 0d |  |  |  | 47.2h | 742.4 | 742.4 |
| 212 | 2.1.5.3.1 | Realizar preparações de acordo com plano de ação |  | 2d | 2010-08-20 | 2010-08-24 | 210 | 2010-08-20 | 2010-08-24 | 2d | 0d |  |  | Ana Beatriz | 16h | 512 | 512 |
| 213 | 2.1.5.3.2 | Facilitar/revisar/monitorar trabalhos |  | 3d | 2010-08-24 | 2010-08-27 | 212 | 2010-08-24 | 2010-08-27 | 3d | 0d |  |  | Ana Beatriz [30%]; Evandro Tavares | 31.2h | 230.4 | 230.4 |
| 214 | 2.1.5.4 | **Infraestrutura** |  | 2.88d | 2010-08-20 | 2010-08-24 |  | 2010-08-19 | 2010-08-24 | 2.88d | -19.62d | 0d |  |  | 23h | 519.93 | 519.93 |
| 215 | 2.1.5.4.1 | **Servidor de sistema de apoio à análise de negócio (BI)** |  | 2.88d | 2010-08-20 | 2010-08-24 |  | 2010-08-19 | 2010-08-24 | 2.88d | -19.62d | 0d |  |  | 23h | 519.93 | 519.93 |
| 216 | 2.1.5.4.1.1 | Planejar implantação |  | 0.62d | 2010-08-20 | 2010-08-20 | 206 | 2010-08-19 | 2010-08-20 | 0.62d | -19.62d | 0d |  | Waldemar Nogueira | 5h | 208.75 | 208.75 |
| 217 | 2.1.5.4.1.2 | Realizar implantação |  | 2d | 2010-08-20 | 2010-08-24 | 216 | 2010-08-20 | 2010-08-24 | 2d | -19.62d | 0d |  | Vicente Silva | 16h | 227.68 | 227.68 |
| 218 | 2.1.5.4.1.3 | Testar e avaliar implantação |  | 0.25d | 2010-08-24 | 2010-08-24 | 217 | 2010-08-24 | 2010-08-24 | 0.25d | -19.62d | 0d |  | Waldemar Nogueira | 2h | 83.5 | 83.5 |
| 219 | 2.1.5.5 | **Construção de sistemas de apoio** |  | 30.88d | 2010-08-24 | 2010-10-07 |  | 2010-08-24 | 2010-10-07 | 31d | -19.62d | 0d |  |  | 358h | 11,659.25 | 11,659.25 |
| 220 | 2.1.5.5.1 | **Sistema de coleta, armazenamento e análise da medição** |  | 20.38d | 2010-08-24 | 2010-09-23 |  | 2010-08-24 | 2010-09-23 | 20.5d | -19.62d | 0d |  |  | 198h | 6,463.75 | 6,463.75 |
| 221 | 2.1.5.5.1.1 | Realizar levantamento dos requisitos |  | 18h | 2010-08-24 | 2010-09-01 | 218 | 2010-08-24 | 2010-09-01 | 18h | -23.75d | 0d | finish no earlier than 2010-09-01 | Luciano Pereira [50%]; Waldemar Nogueira | 10h | 333.75 | 333.75 |
| 222 | 2.1.5.5.1.2 | Realizar análise e especificação |  | 1.62d | 2010-09-02 | 2010-09-06 | 221 | 2010-09-02 | 2010-09-06 | 1.62d | -23.75d | 0d |  | Luciano Pereira [75%] | 8h | 200 | 200 |
| 223 | 2.1.5.5.1.3 | Verificar e validar |  | 0.25d | 2010-09-08 | 2010-09-08 | 222 | 2010-09-08 | 2010-09-08 | 0.25d | -2.75d | 0d |  | Ana Beatriz; Waldemar Nogueira | 4h | 147.5 | 147.5 |
| 224 | 2.1.5.5.1.4 | Executar desenvolvimento |  | 10d | 2010-09-08 | 2010-09-22 | 223 | 2010-09-08 | 2010-09-22 | 10d | -2.75d | 0d |  | Luciano Pereira; Waldemar Nogueira | 160h | 5,340 | 5,340 |
| 225 | 2.1.5.5.1.5 | Testar sistema |  | 0.5d | 2010-09-22 | 2010-09-22 | 224 | 2010-09-22 | 2010-09-22 | 0.5d | 0d |  |  | Ana Beatriz; Waldemar Nogueira [50%] | 4h | 147.5 | 147.5 |
| 226 | 2.1.5.5.1.6 | Validar produto junto as partes interessadas |  | 4h | 2010-09-22 | 2010-09-23 | 225 | 2010-09-22 | 2010-09-23 | 4h | 0d |  |  | Ana Beatriz; Evandro Tavares; Waldemar Nogueira | 12h | 295 | 295 |
| 227 | 2.1.5.5.1.7 | Entrega do produto | milestone | 0d | 2010-09-23 | 2010-09-23 | 226 | 2010-09-23 | 2010-09-23 | 0d | 0d |  |  |  |  |  |  |
| 228 | 2.1.5.5.2 | **Disponibilização dos dados** |  | 11.5d | 2010-09-22 | 2010-10-07 |  | 2010-09-22 | 2010-10-07 | 11.5d | -2.75d | 0d |  |  | 160h | 5,195.5 | 5,195.5 |
| 229 | 2.1.5.5.2.1 | Realizar levantamento dos requisitos |  | 4h | 2010-09-22 | 2010-09-22 | 224 | 2010-09-22 | 2010-09-22 | 4h | -2.75d | 0d |  | Luciano Pereira; Waldemar Nogueira [50%] | 4h | 133.5 | 133.5 |
| 230 | 2.1.5.5.2.2 | Realizar análise e especificação |  | 4h | 2010-09-22 | 2010-09-23 | 229 | 2010-09-22 | 2010-09-23 | 4h | -2.75d | 0d |  | Luciano Pereira | 4h | 100 | 100 |
| 231 | 2.1.5.5.2.3 | Verificar e validar |  | 0.25d | 2010-09-23 | 2010-09-23 | 230 | 2010-09-23 | 2010-09-23 | 0.25d | -2.75d | 0d |  | Ana Beatriz; Waldemar Nogueira | 4h | 147.5 | 147.5 |
| 232 | 2.1.5.5.2.4 | Executar desenvolvimento |  | 9d | 2010-09-23 | 2010-10-06 | 231 | 2010-09-23 | 2010-10-06 | 9d | -2.75d | 0d |  | Luciano Pereira; Waldemar Nogueira | 128h | 4,272 | 4,272 |
| 233 | 2.1.5.5.2.5 | Testar sistema |  | 0.25d | 2010-10-07 | 2010-10-07 | 232 | 2010-10-07 | 2010-10-07 | 0.25d | -2.75d | 0d |  | Ana Beatriz; Waldemar Nogueira | 4h | 147.5 | 147.5 |
| 234 | 2.1.5.5.2.6 | Validar produto junto as partes interessadas |  | 0.5d | 2010-10-07 | 2010-10-07 | 233 | 2010-10-07 | 2010-10-07 | 0.5d | -2.75d | 0d |  | Ana Beatriz; Luciano Pereira; Evandro Tavares; Waldemar Nogueira | 16h | 395 | 395 |
| 235 | 2.1.5.5.2.7 | Entrega do produto | milestone | 0d | 2010-10-07 | 2010-10-07 | 234 | 2010-10-07 | 2010-10-07 | 0d | -2.75d | 0d |  |  |  |  |  |
| 236 | 2.1.5.6 | Conclusão da maturação do processo MA | milestone | 0d | 2010-10-07 | 2010-10-07 | 235 | 2010-10-07 | 2010-10-07 | 0d | -2.75d | 0d |  |  |  |  |  |

| ID | WBS | Task | Type | Duration | Start | Finish | Predecessors | Baseline start | Baseline finish | Baseline duration | Total slack | Free slack | Constraint | Resources | Work | Cost | Baseline cost |
| --- | --- | --- | --- | --- | --- | --- | --- | --- | --- | --- | --- | --- | --- | --- | --- | --- | --- |
| 237 | 2.1.6 | **PPQA** |  | 18.49d | 2010-10-05 | 2010-11-01 |  | 2010-10-05 | 2010-11-01 | 18.49d | 0d |  |  |  | 280.5h | 6,202.25 | 6,202.25 |
| 238 | 2.1.6.1 | **Treinamentos** |  | 1d | 2010-10-05 | 2010-10-05 |  | 2010-10-05 | 2010-10-05 | 1d | 0d |  |  |  | 16h | 456 | 456 |
| 239 | 2.1.6.1.1 | Participar de treinamento: Garantia da Qualidade de Processo e de Produto |  | 1d | 2010-10-05 | 2010-10-05 | 236 | 2010-10-05 | 2010-10-05 | 1d | -2.75d | 0d | must start on 2010-10-05 | Ana Beatriz; Luciano Pereira | 16h | 456 | 456 |
| 240 | 2.1.6.2 | **Plano de ação** |  | 2.12d | 2010-10-06 | 2010-10-08 |  | 2010-10-06 | 2010-10-08 | 2.12d | -1d | 0d |  |  | 29h | 644 | 644 |
| 241 | 2.1.6.2.1 | Criar plano de ação |  | 1d | 2010-10-06 | 2010-10-06 | 239 | 2010-10-06 | 2010-10-06 | 1d | -1d | 0d |  | Ana Beatriz | 8h | 256 | 256 |
| 242 | 2.1.6.2.2 | Rever, modificar e aprovar plano de ação |  | 2d | 2010-10-06 | 2010-10-07 | 241 | 2010-10-06 | 2010-10-07 | 2d | -1d | 0d | start no later than 2010-10-06 | Ana Beatriz; Luciano Pereira [50%]; Evandro Tavares | 20h | 356 | 356 |
| 243 | 2.1.6.2.3 | Atribuir responsabilidades |  | 1h | 2010-10-08 | 2010-10-08 | 242 | 2010-10-08 | 2010-10-08 | 1h | 0d |  |  | Ana Beatriz | 1h | 32 | 32 |
| 244 | 2.1.6.3 | **Execução do plano de ação** |  | 5d | 2010-10-08 | 2010-10-18 |  | 2010-10-08 | 2010-10-18 | 5d | 0d |  |  |  | 120h | 2,280 | 2,280 |
| 245 | 2.1.6.3.1 | Realizar preparações de acordo com plano de ação |  | 5d | 2010-10-08 | 2010-10-18 | 243 | 2010-10-08 | 2010-10-18 | 5d | 0d |  |  | Ana Beatriz [50%]; Luciano Pereira [50%] | 40h | 1,140 | 1,140 |
| 246 | 2.1.6.3.2 | Facilitar/revisar/monitorar trabalhos |  | 5d | 2010-10-08 | 2010-10-18 | 245SS | 2010-10-08 | 2010-10-18 | 5d | 0.51d | 0d |  | Ana Beatriz [50%]; Luciano Pereira [50%]; Evandro Tavares | 80h | 1,140 | 1,140 |
| 247 | 2.1.6.4 | **Construção de sistemas de apoio** |  | 9.96d | 2010-10-18 | 2010-11-01 |  | 2010-10-18 | 2010-11-01 | 9.96d | 0.51d |  |  |  | 112h | 2,733 | 2,733 |
| 248 | 2.1.6.4.1 | **Coleta e armazenamento de dados de auditoria da qualidade** |  | 4.75d | 2010-10-18 | 2010-10-22 |  | 2010-10-18 | 2010-10-22 | 4.75d | 0.51d |  |  |  | 56h | 1,390 | 1,390 |
| 249 | 2.1.6.4.1.1 | Realizar levantamento dos requisitos |  | 2h | 2010-10-18 | 2010-10-18 | 246 | 2010-10-18 | 2010-10-18 | 2h | 0.51d | 0d |  | Ana Beatriz; Luciano Pereira | 4h | 114 | 114 |
| 250 | 2.1.6.4.1.2 | Realizar análise e especificação |  | 8h | 2010-10-18 | 2010-10-19 | 249 | 2010-10-18 | 2010-10-19 | 8h | 0.51d | 0d |  | Ana Beatriz; Luciano Pereira | 16h | 456 | 456 |
| 251 | 2.1.6.4.1.3 | Verificar e validar |  | 2h | 2010-10-19 | 2010-10-19 | 250 | 2010-10-19 | 2010-10-19 | 2h | 0.51d | 0d |  | Evandro Tavares | 2h |  |  |
| 252 | 2.1.6.4.1.4 | Executar desenvolvimento |  | 2d | 2010-10-19 | 2010-10-21 | 251 | 2010-10-19 | 2010-10-21 | 2d | 0.51d | 0d |  | Luciano Pereira | 16h | 400 | 400 |
| 253 | 2.1.6.4.1.5 | Testar sistema |  | 6h | 2010-10-21 | 2010-10-22 | 252 | 2010-10-21 | 2010-10-22 | 6h | 0.51d | 0d |  | Ana Beatriz | 6h | 192 | 192 |
| 254 | 2.1.6.4.1.6 | Validar produto junto as partes interessadas |  | 4h | 2010-10-22 | 2010-10-22 | 253 | 2010-10-22 | 2010-10-22 | 4h | 0.51d | 0d |  | Ana Beatriz; Luciano Pereira; Evandro Tavares | 12h | 228 | 228 |
| 255 | 2.1.6.4.1.7 | Entrega do produto | milestone | 0d | 2010-10-22 | 2010-10-22 | 254 | 2010-10-22 | 2010-10-22 | 0d | 0.51d | 0d |  |  |  |  |  |
| 256 | 2.1.6.4.2 | **Registro das ações corretivas** |  | 2.17d | 2010-10-22 | 2010-10-27 |  | 2010-10-22 | 2010-10-27 | 2.17d | 0.51d |  |  |  | 26h | 632 | 632 |
| 257 | 2.1.6.4.2.1 | Realizar levantamento dos requisitos |  | 2h | 2010-10-22 | 2010-10-25 | 255 | 2010-10-22 | 2010-10-25 | 2h | 0.51d | 0d |  | Ana Beatriz; Luciano Pereira | 4h | 114 | 114 |
| 258 | 2.1.6.4.2.2 | Realizar análise e especificação |  | 4h | 2010-10-25 | 2010-10-25 | 257 | 2010-10-25 | 2010-10-25 | 4h | 0.51d | 0d |  | Ana Beatriz; Luciano Pereira | 8h | 228 | 228 |
| 259 | 2.1.6.4.2.3 | Verificar e validar |  | 0.25d | 2010-10-25 | 2010-10-25 | 258 | 2010-10-25 | 2010-10-25 | 0.25d | 0.51d | 0d |  | Evandro Tavares | 2h |  |  |
| 260 | 2.1.6.4.2.4 | Executar desenvolvimento |  | 0.75d | 2010-10-25 | 2010-10-26 | 259 | 2010-10-25 | 2010-10-26 | 0.75d | 0.51d | 0d |  | Luciano Pereira | 6h | 150 | 150 |
| 261 | 2.1.6.4.2.5 | Testar sistema |  | 0.25d | 2010-10-26 | 2010-10-26 | 260 | 2010-10-26 | 2010-10-26 | 0.25d | 0.51d | 0d |  | Ana Beatriz | 2h | 64 | 64 |
| 262 | 2.1.6.4.2.6 | Validar produto junto as partes interessadas |  | 0.17d | 2010-10-26 | 2010-10-27 | 261 | 2010-10-26 | 2010-10-27 | 0.17d | 0.51d | 0d |  | Ana Beatriz; Luciano Pereira; Evandro Tavares | 4h | 76 | 76 |
| 263 | 2.1.6.4.2.7 | Entrega do produto | milestone | 0d | 2010-10-27 | 2010-10-27 | 262 | 2010-10-27 | 2010-10-27 | 0d | 0.51d | 0d |  |  |  |  |  |

| ID | WBS | Task | Type | Duration | Start | Finish | Predecessors | Baseline start | Baseline finish | Baseline duration | Total slack | Free slack | Constraint | Resources | Work | Cost | Baseline cost |
| --- | --- | --- | --- | --- | --- | --- | --- | --- | --- | --- | --- | --- | --- | --- | --- | --- | --- |
| 264 | 2.1.6.4.3 | **Relatórios da garantia da qualidade** |  | 3.04d | 2010-10-27 | 2010-11-01 |  | 2010-10-27 | 2010-11-01 | 3.04d | 0.51d |  |  |  | 30h | 711 | 711 |
| 265 | 2.1.6.4.3.1 | Realizar levantamento dos requisitos |  | 0.12d | 2010-10-27 | 2010-10-27 | 263 | 2010-10-27 | 2010-10-27 | 0.12d | 0.51d | 0d |  | Ana Beatriz; Luciano Pereira | 2h | 57 | 57 |
| 266 | 2.1.6.4.3.2 | Realizar análise e especificação |  | 0.25d | 2010-10-27 | 2010-10-27 | 265 | 2010-10-27 | 2010-10-27 | 0.25d | 0.51d | 0d |  | Ana Beatriz; Luciano Pereira | 4h | 114 | 114 |
| 267 | 2.1.6.4.3.3 | Verificar e validar |  | 0.25d | 2010-10-27 | 2010-10-27 | 266 | 2010-10-27 | 2010-10-27 | 0.25d | 0.51d | 0d |  | Evandro Tavares | 2h |  |  |
| 268 | 2.1.6.4.3.4 | Executar desenvolvimento |  | 2d | 2010-10-27 | 2010-10-29 | 267 | 2010-10-27 | 2010-10-29 | 2d | 0.51d | 0d |  | Luciano Pereira | 16h | 400 | 400 |
| 269 | 2.1.6.4.3.5 | Testar sistema |  | 0.25d | 2010-10-29 | 2010-10-29 | 268 | 2010-10-29 | 2010-10-29 | 0.25d | 0.51d | 0d |  | Ana Beatriz | 2h | 64 | 64 |
| 270 | 2.1.6.4.3.6 | Validar produto junto as partes interessadas |  | 0.17d | 2010-10-29 | 2010-11-01 | 269 | 2010-10-29 | 2010-11-01 | 0.17d | 0.51d | 0d |  | Ana Beatriz; Luciano Pereira; Evandro Tavares | 4h | 76 | 76 |
| 271 | 2.1.6.4.3.7 | Entrega do produto | milestone | 0d | 2010-11-01 | 2010-11-01 | 270 | 2010-11-01 | 2010-11-01 | 0d | 0.51d | 0d |  |  |  |  |  |
| 272 | 2.1.6.5 | **Construção de modelos** |  | 0.41d | 2010-11-01 | 2010-11-01 |  | 2010-11-01 | 2010-11-01 | 0.41d | 0.51d |  |  |  | 3.5h | 89.25 | 89.25 |
| 273 | 2.1.6.5.1 | **Lições aprendidas** |  | 0.41d | 2010-11-01 | 2010-11-01 |  | 2010-11-01 | 2010-11-01 | 0.41d | 0.51d |  |  |  | 3.5h | 89.25 | 89.25 |
| 274 | 2.1.6.5.1.1 | Levantar requisitos |  | 0.12d | 2010-11-01 | 2010-11-01 | 271 | 2010-11-01 | 2010-11-01 | 0.12d | 0.51d | 0d |  | Luciano Pereira | 1h | 25 | 25 |
| 275 | 2.1.6.5.1.2 | Construir modelo |  | 0.25d | 2010-11-01 | 2010-11-01 | 274 | 2010-11-01 | 2010-11-01 | 0.25d | 0.51d | 0d |  | Luciano Pereira | 2h | 50 | 50 |
| 276 | 2.1.6.5.1.3 | Validar modelo junto as partes interessadas |  | 0.03d | 2010-11-01 | 2010-11-01 | 275 | 2010-11-01 | 2010-11-01 | 0.03d | 0.51d | 0d |  | Ana Beatriz; Luciano Pereira | 0.5h | 14.25 | 14.25 |
| 277 | 2.1.6.6 | Conclusão da maturação do processo PPQA | milestone | 0d | 2010-11-01 | 2010-11-01 | 276 | 2010-11-01 | 2010-11-01 | 0d | 0.51d |  |  |  |  |  |  |
| 278 | 2.1.7 | **CM** |  | 9.5d | 2010-11-02 | 2010-11-17 |  | 2010-11-02 | 2010-11-18 | 10.5d | -85.62d | 0d |  |  | 192h | 3,875.76 | 4,131.76 |
| 279 | 2.1.7.1 | **Treinamentos** |  | 1d | 2010-11-02 | 2010-11-03 |  | 2010-11-02 | 2010-11-03 | 1d | 0d |  |  |  | 48h | 979.76 | 979.76 |
| 280 | 2.1.7.1.1 | Participar de treinamento: Gestão de Configuração |  | 1d | 2010-11-02 | 2010-11-03 | 277 | 2010-11-02 | 2010-11-03 | 1d | 0d |  | must start on 2010-11-02 | Ana Beatriz; Luciano Pereira; Vicente Silva; Tarcísio Meira; Olavo Mesquita; Hugo Almeida | 48h | 979.76 | 979.76 |
| 281 | 2.1.7.2 | **Plano de ação** |  | 1.62d | 2010-11-04 | 2010-11-05 |  | 2010-11-04 | 2010-11-05 | 1.62d | -86.62d | 0d |  |  | 25h | 566 | 566 |
| 282 | 2.1.7.2.1 | Criar plano de ação |  | 0.75d | 2010-11-04 | 2010-11-04 | 280 | 2010-11-04 | 2010-11-04 | 0.75d | -86.62d | 0d |  | Ana Beatriz | 6h | 192 | 192 |
| 283 | 2.1.7.2.2 | Rever, modificar e aprovar plano de ação |  | 0.75d | 2010-11-04 | 2010-11-05 | 282 | 2010-11-04 | 2010-11-05 | 0.75d | -86.62d | 0d |  | Ana Beatriz; Luciano Pereira; Evandro Tavares | 18h | 342 | 342 |
| 284 | 2.1.7.2.3 | Atribuir responsabilidades |  | 0.12d | 2010-11-05 | 2010-11-05 | 283 | 2010-11-05 | 2010-11-05 | 0.12d | -86.62d | 0d |  | Ana Beatriz | 1h | 32 | 32 |
| 285 | 2.1.7.3 | **Execução do plano de ação** |  | 1.5d | 2010-11-05 | 2010-11-09 |  | 2010-11-05 | 2010-11-10 | 2.5d | -86.62d | 0d |  |  | 32h | 684 | 940 |
| 286 | 2.1.7.3.1 | Realizar preparações de acordo com plano de ação |  | 0.5d | 2010-11-05 | 2010-11-08 | 284 | 2010-11-05 | 2010-11-08 | 0.5d | -86.62d | 0d |  | Ana Beatriz; Luciano Pereira | 8h | 228 | 228 |
| 287 | 2.1.7.3.2 | Facilitar/revisar/monitorar trabalhos |  | 8h | 2010-11-08 | 2010-11-09 | 286 | 2010-11-09 | 2010-11-10 | 8h | -86.62d | 0d |  | Ana Beatriz; Luciano Pereira; Evandro Tavares | 24h | 456 | 456 |

| ID | WBS | Task | Type | Duration | Start | Finish | Predecessors | Baseline start | Baseline finish | Baseline duration | Total slack | Free slack | Resources | Work | Cost | Baseline cost |
| --- | --- | --- | --- | --- | --- | --- | --- | --- | --- | --- | --- | --- | --- | --- | --- | --- |
| 288 | 2.1.7.4 | **Infraestrutura** |  | 5.38d | 2010-11-09 | 2010-11-17 |  | 2010-11-10 | 2010-11-18 | 5.38d | -86.62d | 0d |  | 87h | 1,646 | 1,646 |
| 289 | 2.1.7.4.1 | **Solicitações de alteração** |  | 2.62d | 2010-11-09 | 2010-11-11 |  | 2010-11-10 | 2010-11-12 | 2.62d | -86.62d | 0d |  | 53h | 1,050.91 | 1,050.91 |
| 290 | 2.1.7.4.1.1 | Planejar implantação |  | 0.62d | 2010-11-09 | 2010-11-09 | 287 | 2010-11-10 | 2010-11-10 | 0.62d | -86.62d | 0d | Vicente Silva | 5h | 71.15 | 71.15 |
| 291 | 2.1.7.4.1.2 | Realizar implantação |  | 1d | 2010-11-09 | 2010-11-10 | 290 | 2010-11-10 | 2010-11-11 | 1d | -86.62d | 0d | Vicente Silva | 8h | 113.84 | 113.84 |
| 292 | 2.1.7.4.1.3 | Testar e avaliar implantação |  | 1d | 2010-11-10 | 2010-11-11 | 291 | 2010-11-11 | 2010-11-12 | 1d | -86.62d | 0d | Ana Beatriz; Luciano Pereira; Tarcísio Meira; Olavo Mesquita; Hugo Almeida | 40h | 865.92 | 865.92 |
| 293 | 2.1.7.4.2 | **Adequações ao sistema de controle de versão** |  | 2.75d | 2010-11-11 | 2010-11-17 |  | 2010-11-12 | 2010-11-18 | 2.75d | -86.62d | 0d |  | 34h | 595.09 | 595.09 |
| 294 | 2.1.7.4.2.1 | Planejar implantação |  | 0.38d | 2010-11-11 | 2010-11-12 | 292 | 2010-11-12 | 2010-11-16 | 0.38d | -86.62d | 0d | Vicente Silva | 3h | 42.69 | 42.69 |
| 295 | 2.1.7.4.2.2 | Realizar implantação |  | 2d | 2010-11-12 | 2010-11-17 | 294 | 2010-11-16 | 2010-11-18 | 2d | -86.62d | 0d | Vicente Silva | 16h | 227.68 | 227.68 |
| 296 | 2.1.7.4.2.3 | Testar e avaliar implantação |  | 0.38d | 2010-11-17 | 2010-11-17 | 295 | 2010-11-18 | 2010-11-18 | 0.38d | -86.62d | 0d | Ana Beatriz; Luciano Pereira; Tarcísio Meira; Olavo Mesquita; Hugo Almeida | 15h | 324.72 | 324.72 |
| 297 | 2.1.7.5 | Conclusão da maturação do processo CM | milestone | 0d | 2010-11-17 | 2010-11-17 | 296 | 2010-11-18 | 2010-11-18 | 0d | -86.62d | 0d |  |  |  |  |
| 298 | 3 | **Piloto** |  | 179.12d | 2010-11-17 | 2011-07-29 |  | 2010-11-18 | 2011-08-01 | 179.12d | -86.62d | 0d |  | 3225.68h | 65,112.84 | 65,217.84 |
| 299 | 3.1 | **Preparação** |  | 16.5d | 2010-11-17 | 2010-12-10 |  | 2010-11-18 | 2010-12-13 | 16.5d | -86.62d | 0d |  | 448h | 9,632 | 9,632 |
| 300 | 3.1.1 | Selecionar projetos pilotos |  | 1d | 2010-11-17 | 2010-11-18 | 297 | 2010-11-18 | 2010-11-19 | 1d | -86.62d | 0d | Ana Beatriz; Luiz Alves; Evandro Tavares | 24h | 512 | 512 |
| 301 | 3.1.2 | Documentar critérios de sucesso |  | 0.5d | 2010-11-18 | 2010-11-18 | 300 | 2010-11-19 | 2010-11-19 | 0.5d | -86.62d | 0d | Ana Beatriz; Evandro Tavares | 8h | 128 | 128 |
| 302 | 3.1.3 | Orientar e treinar membros do projeto piloto |  | 15d | 2010-11-19 | 2010-12-10 | 301 | 2010-11-22 | 2010-12-13 | 15d | -86.62d | 0d | Ana Beatriz; Luciano Pereira; Evandro Tavares; Bernardo Antônio | 416h | 8,992 | 8,992 |
| 303 | 3.2 | **1ª evolução do piloto: REQM** |  | 35.25d | 2010-12-10 | 2011-02-01 |  | 2010-12-13 | 2011-02-02 | 35.25d | -65.62d | 0d |  | 625h | 10,773 | 10,773 |
| 304 | 3.2.1 | **Execução** |  | 20d | 2010-12-10 | 2011-01-10 |  | 2010-12-13 | 2011-01-11 | 20d | -65.62d | 0d |  | 375h | 6,725 | 6,725 |
| 305 | 3.2.1.1 | Início da execução do projeto piloto | milestone | 0d | 2010-12-10 | 2010-12-10 | 302 | 2010-12-13 | 2010-12-13 | 0d | -65.62d | 0d |  |  |  |  |
| 306 | 3.2.1.2 | Realizar pilotos |  | 20d | 2010-12-13 | 2011-01-10 | 305 | 2010-12-14 | 2011-01-11 | 20d | -65.62d | 0d | Bernardo Antônio | 135h | 4,725 | 4,725 |
| 307 | 3.2.1.3 | Realizar suporte |  | 20d | 2010-12-13 | 2011-01-10 | 306SS | 2010-12-14 | 2011-01-11 | 20d | -65.62d | 0d | Luciano Pereira; Evandro Tavares | 240h | 2,000 | 2,000 |
| 308 | 3.2.2 | **Monitoramento** |  | 10.25d | 2011-01-11 | 2011-01-25 |  | 2011-01-12 | 2011-01-26 | 10.25d | -65.62d | 0d |  | 162h | 2,624 | 2,624 |
| 309 | 3.2.2.1 | Monitorar pilotos |  | 10d | 2011-01-11 | 2011-01-24 | 307 | 2011-01-12 | 2011-01-25 | 10d | -65.62d | 0d | Ana Beatriz; Evandro Tavares | 160h | 2,560 | 2,560 |
| 310 | 3.2.2.2 | Relatar andamento |  | 2h | 2011-01-25 | 2011-01-25 | 309 | 2011-01-26 | 2011-01-26 | 2h | -65.62d | 0d | Ana Beatriz | 2h | 64 | 64 |
| 311 | 3.2.3 | **Análise dos resultados** |  | 3d | 2011-01-25 | 2011-01-28 |  | 2011-01-26 | 2011-01-31 | 3d | -65.62d | 0d |  | 48h | 712 | 712 |
| 312 | 3.2.3.1 | Analisar resultados |  | 1d | 2011-01-25 | 2011-01-26 | 310 | 2011-01-26 | 2011-01-27 | 1d | -65.62d | 0d | Ana Beatriz; Evandro Tavares | 16h | 256 | 256 |
| 313 | 3.2.3.2 | Medir sucesso |  | 1d | 2011-01-26 | 2011-01-27 | 312 | 2011-01-27 | 2011-01-28 | 1d | -65.62d | 0d | Evandro Tavares; Luciano Pereira | 16h | 200 | 200 |
| 314 | 3.2.3.3 | Fornecer lições aprendidas |  | 8h | 2011-01-27 | 2011-01-28 | 313 | 2011-01-28 | 2011-01-31 | 8h | -65.62d | 0d | Ana Beatriz; Evandro Tavares | 16h | 256 | 256 |

| ID | WBS | Task | Type | Duration | Start | Finish | Predecessors | Baseline start | Baseline finish | Baseline duration | Total slack | Free slack | Resources | Work | Cost | Baseline cost |
| --- | --- | --- | --- | --- | --- | --- | --- | --- | --- | --- | --- | --- | --- | --- | --- | --- |
| 315 | 3.2.4 | **Atualização dos procedimentos** |  | 2d | 2011-01-28 | 2011-02-01 |  | 2011-01-31 | 2011-02-02 | 2d | -65.62d | 0d |  | 40h | 712 | 712 |
| 316 | 3.2.4.1 | Atualizar procedimentos e modelos |  | 1d | 2011-01-28 | 2011-01-31 | 314 | 2011-01-31 | 2011-02-01 | 1d | -65.62d | 0d | Ana Beatriz; Luciano Pereira; Evandro Tavares | 24h | 456 | 456 |
| 317 | 3.2.4.2 | Planejar repiloto |  | 1d | 2011-01-31 | 2011-02-01 | 316 | 2011-02-01 | 2011-02-02 | 1d | -65.62d | 0d | Ana Beatriz; Evandro Tavares | 16h | 256 | 256 |
| 318 | 3.3 | **2ª evolução do piloto: PP e PMC** |  | 33.88d | 2011-02-01 | 2011-03-21 |  | 2011-02-02 | 2011-03-22 | 33.88d | -65.62d | 0d |  | 853h | 17,297 | 17,297 |
| 319 | 3.3.1 | **Execução** |  | 25d | 2011-02-01 | 2011-03-08 |  | 2011-02-02 | 2011-03-09 | 25d | -65.62d | 0d |  | 475h | 10,825 | 10,825 |
| 320 | 3.3.1.1 | Início da execução do projeto piloto | milestone | 0d | 2011-02-01 | 2011-02-01 | 317 | 2011-02-02 | 2011-02-02 | 0d | -65.62d | 0d |  |  |  |  |
| 321 | 3.3.1.2 | Realizar pilotos |  | 25d | 2011-02-01 | 2011-03-08 | 320 | 2011-02-02 | 2011-03-09 | 25d | -65.62d | 0d | Bernardo Antônio [50%] | 75h | 2,625 | 2,625 |
| 322 | 3.3.1.3 | Realizar suporte |  | 25d | 2011-02-01 | 2011-03-08 | 321SS | 2011-02-02 | 2011-03-09 | 25d | -65.62d | 0d | Ana Beatriz [50%]; Luciano Pereira; Evandro Tavares [50%] | 400h | 8,200 | 8,200 |
| 323 | 3.3.2 | **Monitoramento** |  | 25.5d | 2011-02-01 | 2011-03-08 |  | 2011-02-02 | 2011-03-09 | 25.5d | -65.62d | 0d |  | 204h | 3,328 | 3,328 |
| 324 | 3.3.2.1 | Monitorar pilotos |  | 25d | 2011-02-01 | 2011-03-08 | 322SS | 2011-02-02 | 2011-03-09 | 25d | -65.62d | 0d | Ana Beatriz [50%]; Evandro Tavares [50%] | 200h | 3,200 | 3,200 |
| 325 | 3.3.2.2 | Relatar andamento |  | 4h | 2011-03-08 | 2011-03-08 | 324 | 2011-03-09 | 2011-03-09 | 4h | -44.62d | 0d | Ana Beatriz | 4h | 128 | 128 |
| 326 | 3.3.3 | **Análise dos resultados** |  | 2.38d | 2011-03-08 | 2011-03-11 |  | 2011-03-09 | 2011-03-14 | 2.38d | -44.62d | 0d |  | 38h | 608 | 608 |
| 327 | 3.3.3.1 | Analisar resultados |  | 1d | 2011-03-08 | 2011-03-09 | 325 | 2011-03-09 | 2011-03-10 | 1d | -44.62d | 0d | Ana Beatriz; Evandro Tavares | 16h | 256 | 256 |
| 328 | 3.3.3.2 | Medir sucesso |  | 1d | 2011-03-09 | 2011-03-10 | 327 | 2011-03-10 | 2011-03-11 | 1d | -44.62d | 0d | Ana Beatriz; Evandro Tavares | 16h | 256 | 256 |
| 329 | 3.3.3.3 | Fornecer lições aprendidas |  | 3h | 2011-03-10 | 2011-03-11 | 328 | 2011-03-11 | 2011-03-14 | 3h | -44.62d | 0d | Ana Beatriz; Evandro Tavares | 6h | 96 | 96 |
| 330 | 3.3.4 | **Atualização dos procedimentos** |  | 6d | 2011-03-11 | 2011-03-21 |  | 2011-03-14 | 2011-03-22 | 6d | -44.62d | 0d |  | 136h | 2,536 | 2,536 |
| 331 | 3.3.4.1 | Atualizar procedimentos e modelos |  | 5d | 2011-03-11 | 2011-03-18 | 329 | 2011-03-14 | 2011-03-21 | 5d | -44.62d | 0d | Ana Beatriz; Luciano Pereira; Evandro Tavares | 120h | 2,280 | 2,280 |
| 332 | 3.3.4.2 | Planejar repiloto |  | 1d | 2011-03-18 | 2011-03-21 | 331 | 2011-03-21 | 2011-03-22 | 1d | -44.62d | 0d | Ana Beatriz; Evandro Tavares | 16h | 256 | 256 |
| 333 | 3.4 | **3ª evolução do piloto: SAM e MA** |  | 37.75d | 2011-03-21 | 2011-05-12 |  | 2011-03-22 | 2011-05-13 | 37.75d | -44.62d | 0d |  | 494.5h | 11,442.5 | 11,547.5 |
| 334 | 3.4.1 | **Execução** |  | 15d | 2011-03-21 | 2011-04-11 |  | 2011-03-22 | 2011-04-12 | 15d | -44.62d | 0d |  | 273h | 6,167 | 6,272 |
| 335 | 3.4.1.1 | Início da execução do projeto piloto | milestone | 0d | 2011-03-21 | 2011-03-21 | 332 | 2011-03-22 | 2011-03-22 | 0d | -44.62d | 0d |  |  |  |  |
| 336 | 3.4.1.2 | Realizar pilotos |  | 14d | 2011-03-21 | 2011-04-08 | 335 | 2011-03-22 | 2011-04-11 | 14d | -44.62d | 0d | Bernardo Antônio; Luciano Pereira; Ana Beatriz [50%] | 213h | 6,167 | 6,272 |
| 337 | 3.4.1.3 | Realizar suporte |  | 15d | 2011-03-21 | 2011-04-11 | 336SS | 2011-03-22 | 2011-04-12 | 15d | -44.62d | 0d | Evandro Tavares [50%] | 60h |  |  |
| 338 | 3.4.2 | **Monitoramento** |  | 15.75d | 2011-03-21 | 2011-04-11 |  | 2011-03-22 | 2011-04-12 | 15.75d | -44.62d | 0d |  | 78h | 2,112 | 2,112 |
| 339 | 3.4.2.1 | Monitorar pilotos |  | 15d | 2011-03-21 | 2011-04-11 | 337SS | 2011-03-22 | 2011-04-12 | 15d | -44.62d | 0d | Ana Beatriz [50%]; Evandro Tavares [10%] | 72h | 1,920 | 1,920 |
| 340 | 3.4.2.2 | Relatar andamento |  | 6h | 2011-04-11 | 2011-04-11 | 339 | 2011-04-12 | 2011-04-12 | 6h | -44.62d | 0d | Ana Beatriz | 6h | 192 | 192 |

| ID | WBS | Task | Type | Duration | Start | Finish | Predecessors | Baseline start | Baseline finish | Baseline duration | Total slack | Free slack | Resources | Work | Cost | Baseline cost |
| --- | --- | --- | --- | --- | --- | --- | --- | --- | --- | --- | --- | --- | --- | --- | --- | --- |
| 341 | 3.4.3 | **Análise dos resultados** |  | 16d | 2011-04-11 | 2011-05-04 |  | 2011-04-12 | 2011-05-05 | 16d | -44.62d | 0d |  | 40h | 640 | 640 |
| 342 | 3.4.3.1 | Analisar resultados |  | 10d | 2011-04-11 | 2011-04-26 | 340 | 2011-04-12 | 2011-04-27 | 10d | -44.62d | 0d | Ana Beatriz; Evandro Tavares [10%] | 16h | 256 | 256 |
| 343 | 3.4.3.2 | Medir sucesso |  | 40h | 2011-04-26 | 2011-05-03 | 342 | 2011-04-27 | 2011-05-04 | 40h | -44.62d | 0d | Ana Beatriz; Evandro Tavares [10%] | 8h | 128 | 128 |
| 344 | 3.4.3.3 | Fornecer lições aprendidas |  | 8h | 2011-05-03 | 2011-05-04 | 343 | 2011-05-04 | 2011-05-05 | 8h | -44.62d | 0d | Ana Beatriz; Evandro Tavares | 16h | 256 | 256 |
| 345 | 3.4.4 | **Atualização dos procedimentos** |  | 6d | 2011-05-04 | 2011-05-12 |  | 2011-05-05 | 2011-05-13 | 6d | -44.62d | 0d |  | 103.5h | 2,523.5 | 2,523.5 |
| 346 | 3.4.4.1 | Atualizar procedimentos e modelos |  | 5d | 2011-05-04 | 2011-05-11 | 344 | 2011-05-05 | 2011-05-12 | 5d | -44.62d | 0d | Ana Beatriz; Luciano Pereira; Evandro Tavares [20%] | 87.5h | 2,267.5 | 2,267.5 |
| 347 | 3.4.4.2 | Planejar repiloto |  | 1d | 2011-05-11 | 2011-05-12 | 346 | 2011-05-12 | 2011-05-13 | 1d | -44.62d | 0d | Ana Beatriz; Evandro Tavares | 16h | 256 | 256 |
| 348 | 3.5 | **4ª evolução do piloto: PPQA e CM** |  | 55.75d | 2011-05-12 | 2011-07-29 |  | 2011-05-13 | 2011-08-01 | 55.75d | -44.62d | 0d |  | 805.18h | 15,968.34 | 15,968.34 |
| 349 | 3.5.1 | **Execução** |  | 22d | 2011-05-12 | 2011-06-13 |  | 2011-05-13 | 2011-06-14 | 22d | -44.62d | 0d |  | 502.88h | 10,754.24 | 10,754.24 |
| 350 | 3.5.1.1 | Início da execução do projeto piloto | milestone | 0d | 2011-05-12 | 2011-05-12 | 347 | 2011-05-13 | 2011-05-13 | 0d | -44.62d | 0d |  |  |  |  |
| 351 | 3.5.1.2 | Realizar pilotos |  | 22d | 2011-05-12 | 2011-06-13 | 350 | 2011-05-13 | 2011-06-14 | 22d | -44.62d | 0d | Ana Beatriz [33%]; Luciano Pereira [50%]; Hugo Almeida | 322.08h | 7,064.64 | 7,064.64 |
| 352 | 3.5.1.3 | Realizar suporte |  | 20d | 2011-05-12 | 2011-06-09 | 351SS | 2011-05-13 | 2011-06-10 | 20d | -44.62d | 0d | Ana Beatriz [33%]; Luciano Pereira [50%]; Evandro Tavares [30%] | 180.8h | 3,689.6 | 3,689.6 |
| 353 | 3.5.2 | **Monitoramento** |  | 20.25d | 2011-05-12 | 2011-06-10 |  | 2011-05-13 | 2011-06-13 | 20.25d | -44.62d | 0d |  | 133.8h | 1,721.6 | 1,721.6 |
| 354 | 3.5.2.1 | Monitorar pilotos |  | 20d | 2011-05-12 | 2011-06-09 | 352SS | 2011-05-13 | 2011-06-10 | 20d | -44.62d | 0d | Ana Beatriz [33%]; Evandro Tavares [50%] | 132.8h | 1,689.6 | 1,689.6 |
| 355 | 3.5.2.2 | Relatar andamento |  | 2h | 2011-06-09 | 2011-06-10 | 354 | 2011-06-10 | 2011-06-13 | 2h | -44.62d | 0d | Ana Beatriz [50%] | 1h | 32 | 32 |
| 356 | 3.5.3 | **Análise dos resultados** |  | 4d | 2011-06-10 | 2011-06-16 |  | 2011-06-13 | 2011-06-17 | 4d | -44.62d | 0d |  | 48h | 768 | 768 |
| 357 | 3.5.3.1 | Analisar resultados |  | 2d | 2011-06-10 | 2011-06-14 | 355 | 2011-06-13 | 2011-06-15 | 2d | -44.62d | 0d | Ana Beatriz [50%]; Evandro Tavares [50%] | 16h | 256 | 256 |
| 358 | 3.5.3.2 | Medir sucesso |  | 8h | 2011-06-14 | 2011-06-15 | 357 | 2011-06-15 | 2011-06-16 | 8h | -44.62d | 0d | Ana Beatriz; Evandro Tavares | 16h | 256 | 256 |
| 359 | 3.5.3.3 | Fornecer lições aprendidas |  | 8h | 2011-06-15 | 2011-06-16 | 358 | 2011-06-16 | 2011-06-17 | 8h | -44.62d | 0d | Ana Beatriz; Evandro Tavares | 16h | 256 | 256 |
| 360 | 3.5.4 | **Atualização dos procedimentos** |  | 31.5d | 2011-06-16 | 2011-07-29 |  | 2011-06-17 | 2011-08-01 | 31.5d | -44.62d | 0d |  | 120.5h | 2,724.5 | 2,724.5 |
| 361 | 3.5.4.1 | Atualizar procedimentos e modelos |  | 11.06d | 2011-06-16 | 2011-07-01 | 359 | 2011-06-17 | 2011-07-04 | 11.06d | -44.62d | 0d | Ana Beatriz; Luciano Pereira; Evandro Tavares | 104.5h | 2,468.5 | 2,468.5 |
| 362 | 3.5.4.2 | Planejar repiloto, se necessário |  | 20.44d | 2011-07-01 | 2011-07-29 | 361 | 2011-07-04 | 2011-08-01 | 20.44d | -44.62d | 0d | Ana Beatriz; Evandro Tavares | 16h | 256 | 256 |
| 363 | 3.6 | Conclusão do projeto piloto | milestone | 0d | 2011-07-29 | 2011-07-29 | 362 | 2011-08-01 | 2011-08-01 | 0d | -44.62d | 0d |  |  |  |  |
| 364 | 4 | **Implementação** |  | 107.38d | 2011-07-29 | 2012-01-03 |  | 2011-08-01 | 2012-01-03 | 106.38d | -44.62d | 0d |  | 2569.5h | 70,213.55 | 70,213.55 |
| 365 | 4.1 | **Preparação** |  | 20d | 2011-07-29 | 2011-08-26 |  | 2011-08-01 | 2011-08-29 | 20d | -44.62d | 0d |  | 152h | 3,472 | 3,472 |
| 366 | 4.1.1 | Selecionar projetos |  | 2d | 2011-07-29 | 2011-08-02 | 363 | 2011-08-01 | 2011-08-03 | 2d | -44.62d | 0d | Ana Beatriz; Luiz Alves; Evandro Tavares; Daniela Amorim; Carlos Eduardo; Bernardo Antônio | 96h | 2,704 | 2,704 |
| 367 | 4.1.2 | Planejar implantação |  | 1d | 2011-08-02 | 2011-08-03 | 366 | 2011-08-03 | 2011-08-04 | 1d | -31.62d | 0d | Ana Beatriz; Evandro Tavares | 16h | 256 | 256 |
| 368 | 4.1.3 | Documentar critérios de sucesso |  | 1d | 2011-08-03 | 2011-08-04 | 367 | 2011-08-04 | 2011-08-05 | 1d | -31.62d | 0d | Ana Beatriz; Evandro Tavares | 16h | 256 | 256 |
| 369 | 4.1.4 | Orientar e treinar membros dos projetos em conceitos do CMMI-DEV L2 |  | 1d | 2011-08-04 | 2011-08-05 | 368 | 2011-08-05 | 2011-08-08 | 1d | -31.62d | 0d | Evandro Tavares | 8h |  |  |
| 370 | 4.1.5 | Orientar e treinar membros do projeto nos procedimentos |  | 15d | 2011-08-05 | 2011-08-26 | 369 | 2011-08-08 | 2011-08-29 | 15d | -31.62d | 0d | Ana Beatriz; Evandro Tavares | 16h | 256 | 256 |

| ID | WBS | Task | Type | Duration | Start | Finish | Predecessors | Baseline start | Baseline finish | Baseline duration | Total slack | Free slack | Constraint | Resources | Work | Cost | Baseline cost |
| --- | --- | --- | --- | --- | --- | --- | --- | --- | --- | --- | --- | --- | --- | --- | --- | --- | --- |
| 371 | 4.2 | **Execução** |  | 87.38d | 2011-08-26 | 2012-01-03 |  | 2011-08-29 | 2012-01-03 | 86.38d | -31.62d | 0d |  |  | 1829.9h | 57,922.35 | 57,922.35 |
| 372 | 4.2.1 | Início da execução da implantação | milestone | 0d | 2011-08-26 | 2011-08-26 | 370 | 2011-08-29 | 2011-08-29 | 0d | -31.62d | 0d |  |  |  |  |  |
| 373 | 4.2.2 | **Projeto 1** |  | 44d | 2011-08-26 | 2011-10-31 |  | 2011-08-29 | 2011-11-01 | 44d | -31.62d | 0d |  |  | 308h | 10,127.95 | 10,127.95 |
| 374 | 4.2.2.1 | Preparar execução |  | 4d | 2011-08-26 | 2011-09-01 | 372 | 2011-08-29 | 2011-09-02 | 4d | -31.62d | 0d |  | Ana Beatriz [50%]; Daniela Amorim [30%] | 25.1h | 832 | 832 |
| 375 | 4.2.2.2 | Realizar execução |  | 40d | 2011-09-01 | 2011-10-31 | 374 | 2011-09-02 | 2011-11-01 | 40d | 0d |  |  | Daniela Amorim [30%]; Luciano Pereira [15%] | 143.55h | 4,548.75 | 4,548.75 |
| 376 | 4.2.2.3 | Auxiliar na execução e prestar suporte |  | 40d | 2011-09-01 | 2011-10-31 | 375SS | 2011-09-02 | 2011-11-01 | 40d | 22.38d |  |  | Ana Beatriz [15%]; Daniela Amorim [30%] | 139.35h | 4,747.2 | 4,747.2 |
| 377 | 4.2.3 | **Projeto 2** |  | 54d | 2011-09-01 | 2011-11-22 |  | 2011-09-02 | 2011-11-23 | 54d | -31.62d | 0d |  |  | 525.1h | 18,051.2 | 18,051.2 |
| 378 | 4.2.3.1 | Preparar execução |  | 4d | 2011-09-01 | 2011-09-08 | 374 | 2011-09-02 | 2011-09-09 | 4d | -31.62d | 0d |  | Ana Beatriz [66.7%]; Bernardo Antônio | 42h | 1,440 | 1,440 |
| 379 | 4.2.3.2 | Realizar execução |  | 50d | 2011-09-08 | 2011-11-22 | 378 | 2011-09-09 | 2011-11-23 | 50d | 0d |  |  | Bernardo Antônio [50%]; Ana Beatriz [15%] | 252h | 8,640 | 8,640 |
| 380 | 4.2.3.3 | Auxiliar na execução e prestar suporte |  | 50d | 2011-09-08 | 2011-11-22 | 379SS | 2011-09-09 | 2011-11-23 | 50d | 0d |  |  | Ana Beatriz [10%]; Bernardo Antônio [50%] | 231.1h | 7,971.2 | 7,971.2 |
| 381 | 4.2.4 | **Projeto 3** |  | 65d | 2011-09-08 | 2011-12-14 |  | 2011-09-09 | 2011-12-15 | 65d | -31.62d | 0d |  |  | 570.4h | 18,099.2 | 18,099.2 |
| 382 | 4.2.4.1 | Preparar execução |  | 4d | 2011-09-08 | 2011-09-14 | 378 | 2011-09-09 | 2011-09-15 | 4d | -31.62d | 0d |  | Carlos Eduardo; Luciano Pereira [40%] | 44.8h | 1,440 | 1,440 |
| 383 | 4.2.4.2 | Realizar execução |  | 40d | 2011-10-14 | 2011-12-14 | 382, 380FS-5% | 2011-10-17 | 2011-12-15 | 40d | 0d |  |  | Luciano Pereira [50%]; Carlos Eduardo [50%] | 320h | 9,600 | 9,600 |
| 384 | 4.2.4.3 | Auxiliar na execução e prestar suporte |  | 40d | 2011-10-14 | 2011-12-14 | 383SS | 2011-10-17 | 2011-12-15 | 40d | 14.38d |  |  | Ana Beatriz [30%]; Carlos Eduardo [50%] | 205.6h | 7,059.2 | 7,059.2 |
| 385 | 4.2.5 | **Projeto 4** |  | 85d | 2011-08-31 | 2012-01-03 |  | 2011-08-31 | 2012-01-03 | 85d | 0d |  |  |  | 426.4h | 11,644 | 11,644 |
| 386 | 4.2.5.1 | Preparar execução |  | 5d | 2011-08-31 | 2011-09-06 | 382 | 2011-08-31 | 2011-09-06 | 5d | -9.62d | 0d | must start on 2011-08-31 | Luciano Pereira; Daniela Amorim [30%] | 52h | 1,420 | 1,420 |
| 387 | 4.2.5.2 | Realizar execução |  | 40d | 2011-09-08 | 2011-11-04 | 386 | 2011-09-08 | 2011-11-04 | 40d | 0d |  |  | Luciano Pereira [40%]; Daniela Amorim [30%] | 171.2h | 4,712 | 4,712 |
| 388 | 4.2.5.3 | Auxiliar na execução e prestar suporte |  | 40d | 2011-11-07 | 2012-01-03 | 387 | 2011-11-07 | 2012-01-03 | 40d | 0d |  |  | Luciano Pereira [50%]; Daniela Amorim [30%] | 203.2h | 5,512 | 5,512 |
| 389 | 4.3 | **Consolidação dos Processos** |  | 68d | 2011-09-08 | 2011-12-19 |  | 2011-09-09 | 2011-12-20 | 68d | 0d |  |  |  | 539.6h | 8,051.2 | 8,051.2 |
| 390 | 4.3.1 | Atualizar procedimentos e modelos |  | 60d | 2011-09-08 | 2011-12-06 | 378 | 2011-09-09 | 2011-12-07 | 60d | 0d |  |  | Ana Beatriz [30%]; Evandro Tavares [30%] | 269.8h | 4,025.6 | 4,025.6 |
| 391 | 4.3.2 | Corrigir não-conformidades |  | 60d | 2011-09-08 | 2011-12-06 | 390SS | 2011-09-09 | 2011-12-07 | 60d | 3d | 0d |  | Ana Beatriz [30%]; Evandro Tavares [30%] | 269.8h | 4,025.6 | 4,025.6 |
| 392 | 4.3.3 | Planejar melhorias |  | 8d | 2011-12-06 | 2011-12-19 | 391 | 2011-12-07 | 2011-12-20 | 8d | 5.38d | 0d |  | Ana Beatriz |  |  |  |
| 393 | 4.4 | **Encerramento** |  | 11.38d | 2011-12-19 | 2012-01-03 |  | 2011-12-20 | 2012-01-03 | 10.38d | 0d |  |  |  | 48h | 768 | 768 |
| 394 | 4.4.1 | Avaliar institucionalização | milestone | 0d | 2011-12-19 | 2011-12-19 | 392 | 2011-12-20 | 2011-12-20 | 0d | 5.38d | 0d |  | Evandro Tavares |  |  |  |
| 395 | 4.4.2 | Construir ou reformular política organizacional |  | 5d | 2011-12-19 | 2011-12-26 | 394 | 2011-12-20 | 2011-12-27 | 5d | 5.38d | 0d |  | Ana Beatriz; Evandro Tavares; Luiz Alves | 48h | 768 | 768 |
| 396 | 4.4.3 | Institucionalizar processo |  | 1d | 2011-12-26 | 2011-12-27 | 395 | 2011-12-27 | 2011-12-28 | 1d | 5.38d |  |  | Ana Beatriz; Luiz Alves; Alimentação [0.1%] |  |  |  |
| 397 | 4.4.4 | Conclusão da implementação e institucionalização da melhoria | milestone | 0d | 2012-01-03 | 2012-01-03 | 396, 388, 384, 380, 376 | 2012-01-03 | 2012-01-03 | 0d | 0d |  |  |  |  |  |  |

| ID | WBS | Task | Type | Duration | Start | Finish | Predecessors | Baseline start | Baseline finish | Baseline duration | Total slack | Deadline | Resources | Work | Cost | Baseline cost |
| --- | --- | --- | --- | --- | --- | --- | --- | --- | --- | --- | --- | --- | --- | --- | --- | --- |
| 398 | 5 | **Avaliação** |  | 24.25d | 2012-01-04 | 2012-02-07 |  | 2012-01-04 | 2012-02-07 | 24.25d | 0d |  |  | 346h | 27,392 | 27,392 |
| 399 | 5.1 | **Seleção dos avaliadores** |  | 3.25d | 2012-01-04 | 2012-01-09 |  | 2012-01-04 | 2012-01-09 | 3.25d | 0d |  |  | 42h | 18,776 | 18,776 |
| 400 | 5.1.1 | Identificar instituições avaliadoras |  | 1d | 2012-01-04 | 2012-01-04 | 397 | 2012-01-04 | 2012-01-04 | 1d | 0d |  | Ana Beatriz; Evandro Tavares | 16h | 256 | 256 |
| 401 | 5.1.2 | Realizar contratações |  | 2h | 2012-01-04 | 2012-01-05 | 400 | 2012-01-04 | 2012-01-05 | 2h | 0d |  | Ana Beatriz; Avaliação CMMI | 2h | 18,064 | 18,064 |
| 402 | 5.1.3 | Planejar avaliações e adquirir recursos |  | 2d | 2012-01-05 | 2012-01-09 | 401 | 2012-01-05 | 2012-01-09 | 2d | 0d |  | Ana Beatriz [50%]; Evandro Tavares; Outras despesas [0.1%] | 24h | 456 | 456 |
| 403 | 5.2 | **Simulado** |  | 15d | 2012-01-09 | 2012-01-30 |  | 2012-01-09 | 2012-01-30 | 15d | 0d |  |  | 240h | 3,280 | 3,280 |
| 404 | 5.2.1 | Realizar avaliação simulada |  | 2d | 2012-01-09 | 2012-01-11 | 402 | 2012-01-09 | 2012-01-11 | 2d | 0d |  | Evandro Tavares | 16h |  |  |
| 405 | 5.2.2 | Verificar aderência dos procedimentos |  | 3d | 2012-01-11 | 2012-01-16 | 404 | 2012-01-11 | 2012-01-16 | 3d | 0d |  | Evandro Tavares | 24h |  |  |
| 406 | 5.2.3 | Realizar ajustes nos procedimentos |  | 10d | 2012-01-16 | 2012-01-30 | 405 | 2012-01-16 | 2012-01-30 | 10d | 0d |  | Ana Beatriz [50%]; Luciano Pereira; Evandro Tavares | 200h | 3,280 | 3,280 |
| 407 | 5.3 | **Avaliação** |  | 6d | 2012-01-30 | 2012-02-07 |  | 2012-01-30 | 2012-02-07 | 6d | 0d |  |  | 64h | 5,336 | 5,336 |
| 408 | 5.3.1 | Preparar avaliação oficial |  | 2d | 2012-01-30 | 2012-02-01 | 406 | 2012-01-30 | 2012-02-01 | 2d | 0d |  | Ana Beatriz; Evandro Tavares | 32h | 512 | 512 |
| 409 | 5.3.2 | Realizar avaliação oficial |  | 4d | 2012-02-01 | 2012-02-07 | 408 | 2012-02-01 | 2012-02-07 | 4d | 0d |  | Ana Beatriz; Alimentação [0.4%]; Transporte [1.8%]; Hospedagem [0.2%] | 32h | 4,824 | 4,824 |
| 410 | 5.3.3 | Término da avaliação oficial | milestone | 0d | 2012-02-07 | 2012-02-07 | 409 | 2012-02-07 | 2012-02-07 | 0d | 0d | 2012-07-06 |  |  |  |  |
| 411 | 6 | **Avaliação dos resultados e lições aprendidas** |  | 1d | 2012-02-07 | 2012-02-08 |  | 2012-02-07 | 2012-02-08 | 1d | 0d |  |  | 8h | 256 | 256 |
| 412 | 6.1 | Construir relatório de lições aprendidas |  | 4h | 2012-02-07 | 2012-02-07 | 410 | 2012-02-07 | 2012-02-07 | 4h | 0d |  | Ana Beatriz | 4h | 128 | 128 |
| 413 | 6.2 | Construir relatório de avaliação do projeto |  | 4h | 2012-02-07 | 2012-02-08 | 412 | 2012-02-07 | 2012-02-08 | 4h | 0d |  | Ana Beatriz | 4h | 128 | 128 |
